Schedule from MS Project, 2011-01-03 to 2012-03-29, A marks actual dates.
INTEGRO TECHNOLOGIES

## Calendars

- Standard: Mon-Fri 08:00-12:00, 13:00-17:00; Sat-Sun off.

## Resources

| Resource |
| --- |
| UOB |
| Integro |
| Vishnu |
| Alicia |
| Patricia |
| Patrick |
| Mellisa |
| Adeline |
| Bollama |
| Min Keat |
| Sujeevan |
| Beng Suang |
| Lum Wei Kit |
| Zuraidah |
| QA |

## Schedule

| ID | WBS | Task | Type | Duration | Start | Finish | Predecessors | Complete | Remaining | Total slack | Free slack | Work | Actual work |
| --- | --- | --- | --- | --- | --- | --- | --- | --- | --- | --- | --- | --- | --- |
| 1 | 1 | Corporate Loans Originanation System (Phase 1) |  | 1d? | 2011-01-03 | 2011-01-03 |  |  |  | 323d |  |  |  |
| 2 | 2 | Requirements Study |  | 1d? | 2011-01-03 | 2011-01-03 |  |  |  | 323d |  |  |  |
| 3 | 3 | Design Phase |  | 1d? | 2011-01-04 | 2011-01-04 | 2 |  |  | 317d | 0d |  |  |
| 4 | 4 | Requirement Study (SG Data Conversion) |  | 1d? | 2011-01-05 | 2011-01-05 | 3 |  |  | 320d | 0d |  |  |
| 5 | 5 | Requirements Study (4 Subsidiaries) |  | 1d? | 2011-01-06 | 2011-01-06 | 4 |  |  | 320d |  |  |  |
| 6 | 6 | Development Phase |  | 1d? | 2011-01-05 | 2011-01-05 | 3 |  |  | 317d | 0d |  |  |
| 7 | 7 | Testing Preparation |  | 1d? | 2011-01-05 | 2011-01-05 | 3 |  |  | 321d |  |  |  |
| 8 | 8 | Vendor Inter Testing (Pre SIT) |  | 1d? | 2011-01-06 | 2011-01-06 | 6 |  |  | 317d | 0d |  |  |
| 9 | 9 | SIT |  | 1d? | 2011-01-07 | 2011-01-07 | 8 |  |  | 317d | 0d |  |  |
| 10 | 10 | UAT |  | 1d? | 2011-01-10 | 2011-01-10 | 9 |  |  | 317d | 0d |  |  |
| 11 | 11 | Data Conversion Mock Run |  | 1d? | 2011-01-10 | 2011-01-10 | 9 |  |  | 318d |  |  |  |
| 12 | 12 | Performance Test |  | 1d? | 2011-01-11 | 2011-01-11 | 10 |  |  | 317d |  |  |  |
| 13 | 13 | Training |  | 1d? | 2011-01-11 | 2011-01-11 | 10 |  |  | 317d |  |  |  |
| 14 | 14 | Deployement |  | 1d? | 2011-01-03 | 2011-01-03 |  |  |  | 323d |  |  |  |
| 15 | 15 | DR Test |  | 1d? | 2011-01-03 | 2011-01-03 |  |  |  | 323d |  |  |  |
| 16 | 16 | Cutover |  | 1d? | 2011-01-03 | 2011-01-03 |  |  |  | 323d |  |  |  |
| 21 | 17 | Kick-off | milestone | 0d | 2011-01-03 | 2011-01-03 |  |  |  | 0d |  |  |  |
| 22 | 18 | **Corporate Loan Origination System (Phase 1)** |  | 324d? | 2011-01-03 A | 2012-03-29 |  | 11% | 287.79d? | 0d |  | 11836.7h | 1175.2h |
| 23 | 18.1 | **Requirement Study Phase** |  | 70d? | 2011-01-03 A | 2011-04-08 | 21 | 62% | 26.86d? | 254d |  | 1920.67h | 1175.2h |
| 24 | 18.1.1 | **Requirement Study (LOS SG)** |  | 70d? | 2011-01-03 A | 2011-04-08 |  | 62% | 26.86d? | 254d |  | 1920.67h | 1175.2h |
| 25 | 18.1.1.1 | **Origination** |  | 40d | 2011-01-03 A | 2011-02-25 A |  | 100% |  |  |  |  |  |
| 26 | 18.1.1.1.1 | Systems and Processes Overview |  | 2d | 2011-01-03 A | 2011-01-04 A |  | 100% |  |  |  |  |  |
| 27 | 18.1.1.1.2 | RM Team Structure |  | 8d | 2011-01-05 A | 2011-01-14 A | 26 | 100% |  |  |  |  |  |
| 28 | 18.1.1.1.3 | Customer Information, Call report |  | 5d | 2011-01-17 A | 2011-01-21 A | 27 | 100% |  |  |  |  |  |
| 29 | 18.1.1.1.4 | CAS Generation |  | 5d | 2011-01-24 A | 2011-01-28 A | 28 | 100% |  |  |  |  |  |
| 30 | 18.1.1.1.5 | Collateral Allocation Clarification |  | 5d | 2011-01-31 A | 2011-02-04 A | 29 | 100% |  |  |  |  |  |
| 31 | 18.1.1.1.6 | Credit Policy (S35, S27, Credit Exceptions) |  | 5d | 2011-02-07 A | 2011-02-11 A | 30 | 100% |  |  |  |  |  |
| 32 | 18.1.1.1.7 | Prospecting |  | 5d | 2011-01-17 A | 2011-01-21 A | 27 | 100% |  |  |  |  |  |
| 33 | 18.1.1.1.8 | Financial Spreading & Workflow |  | 5d | 2011-01-24 A | 2011-01-28 A | 32 | 100% |  |  |  |  |  |
| 34 | 18.1.1.1.9 | Credit Application, Approval Workflow |  | 5d | 2011-01-31 A | 2011-02-04 A | 33 | 100% |  |  |  |  |  |
| 35 | 18.1.1.1.10 | Collateral/ Facility Linkage & Allocation |  | 5d | 2011-02-07 A | 2011-02-11 A | 34 | 100% |  |  |  |  |  |
| 36 | 18.1.1.1.11 | Credit Rating and Financial Analysis |  | 5d | 2011-02-14 A | 2011-02-18 A | 35 | 100% |  |  |  |  |  |
| 37 | 18.1.1.1.12 | Credit Approval |  | 5d | 2011-02-21 A | 2011-02-25 A | 36 | 100% |  |  |  |  |  |
| 38 | 18.1.1.1.13 | One Obligor Exposure |  | 10d | 2011-01-03 A | 2011-01-14 A |  | 100% |  |  |  |  |  |
| 39 | 18.1.1.1.14 | DSCR/ FRR Calculator, Pre-Qualification activities |  | 10d | 2011-01-03 A | 2011-01-14 A |  | 100% |  |  |  |  |  |
| 40 | 18.1.1.1.15 | Group Maintenance & Management |  | 10d | 2011-01-03 A | 2011-01-14 A |  | 100% |  |  |  |  |  |
| 41 | 18.1.1.1.16 | Post Approval Workflow |  | 10d | 2011-01-03 A | 2011-01-14 A |  | 100% |  |  |  |  |  |
| 42 | 18.1.1.1.17 | Account Linking |  | 10d | 2011-01-03 A | 2011-01-14 A |  | 100% |  |  |  |  |  |
| 43 | 18.1.1.1.18 | Facility |  | 10d | 2011-01-03 A | 2011-01-14 A |  | 100% |  |  |  |  |  |
| 44 | 18.1.1.1.19 | Credit Memo, Credit Review & Credit Variation |  | 10d | 2011-01-03 A | 2011-01-14 A |  | 100% |  |  |  |  |  |

Notes:
- 26: This session is already covered. Dates are indicatives only
- 27: This session is already covered. Dates are indicatives only
- 28: This session is already covered. Dates are indicatives only
- 29: This session is already covered. Dates are indicatives only
- 30: This session is already covered. Dates are indicatives only
- 31: This session is already covered. Dates are indicatives only
- 32: This session is already covered. Dates are indicatives only
- 33: This session is already covered. Dates are indicatives only
- 34: This session is already covered. Dates are indicatives only
- 35: This session is already covered. Dates are indicatives only
- 36: This session is already covered. Dates are indicatives only
- 37: This session is already covered. Dates are indicatives only
- 38: This session is already covered. Dates are indicatives only
- 39: This session is already covered. Dates are indicatives only
- 40: This session is already covered. Dates are indicatives only
- 41: This session is already covered. Dates are indicatives only
- 42: This session is already covered. Dates are indicatives only
- 43: This session is already covered. Dates are indicatives only
- 44: This session is already covered. Dates are indicatives only

| ID | WBS | Task | Duration | Start | Finish | Predecessors | Complete | Total slack | Free slack | Constraint | Resources | Work |
| --- | --- | --- | --- | --- | --- | --- | --- | --- | --- | --- | --- | --- |
| 45 | 18.1.1.2 | **Post Approval** | 13d | 2011-02-28 | 2011-03-16 | 25 |  | 258d | 0d |  |  | 32h |
| 46 | 18.1.1.2.1 | Documentation Module & Maintenance | 5d | 2011-02-28 | 2011-03-04 |  |  | 266d |  |  |  |  |
| 47 | 18.1.1.2.2 | LO Maintenance | 5d | 2011-02-28 | 2011-03-04 |  |  | 266d |  |  |  |  |
| 48 | 18.1.1.2.3 | Document Exception & Monitoring | 5d | 2011-02-28 | 2011-03-04 |  |  | 266d |  |  |  |  |
| 49 | 18.1.1.2.4 | Covenants Exception & Monitoring | 5d | 2011-02-28 | 2011-03-04 |  |  | 266d |  |  |  |  |
| 50 | 18.1.1.2.5 | Post-approval Monitoring + Escalation Rules | 5d | 2011-02-28 | 2011-03-04 |  |  | 266d |  |  |  |  |
| 51 | 18.1.1.2.6 | Clarification session | 2d | 2011-03-15 | 2011-03-16 |  |  | 258d | 0d | start no earlier than 2011-03-15 | Alicia; UOB | 32h |
| 52 | 18.1.1.3 | Notification | 7d | 2011-03-03 A | 2011-03-11 A |  | 100% |  |  |  |  |  |
| 53 | 18.1.1.4 | Reporting | 7d | 2011-03-03 A | 2011-03-11 A |  | 100% |  |  |  |  |  |
| 54 | 18.1.1.5 | **Interfaces** | 8d | 2011-03-21 | 2011-03-30 | 45FS+2d |  | 258d | 0d |  |  | 128h |
| 55 | 18.1.1.5.1 | **Online - To Credit Master** | 2d | 2011-03-21 | 2011-03-22 |  |  | 258d | 0d |  | Lum Wei Kit; Zuraidah | 32h |
| 56 | 18.1.1.5.1.1 | BWCIF | 2d | 2011-03-21 | 2011-03-22 |  |  | 258d | 4d |  |  |  |
| 57 | 18.1.1.5.1.2 | FITAS | 2d | 2011-03-21 | 2011-03-22 |  |  | 258d |  |  |  |  |
| 58 | 18.1.1.5.1.3 | GRP | 2d | 2011-03-21 | 2011-03-22 |  |  | 258d |  |  |  |  |
| 59 | 18.1.1.5.1.4 | LES | 2d | 2011-03-21 | 2011-03-22 |  |  | 258d |  |  |  |  |
| 60 | 18.1.1.5.1.5 | PLCE | 2d | 2011-03-21 | 2011-03-22 |  |  | 258d |  |  |  |  |
| 61 | 18.1.1.5.1.6 | BCAS | 2d | 2011-03-21 | 2011-03-22 |  |  | 258d |  |  |  |  |
| 62 | 18.1.1.5.1.7 | RBK | 2d | 2011-03-21 | 2011-03-22 |  |  | 258d |  |  |  |  |
| 63 | 18.1.1.5.1.8 | MCL | 2d | 2011-03-21 | 2011-03-22 |  |  | 258d |  |  |  |  |
| 64 | 18.1.1.5.2 | **Batch - To Credit Master** | 2d | 2011-03-23 | 2011-03-24 | 55 |  | 258d | 0d |  | Lum Wei Kit; Zuraidah | 32h |
| 65 | 18.1.1.5.2.1 | SBS | 2d | 2011-03-23 | 2011-03-24 |  |  | 258d |  |  |  |  |
| 66 | 18.1.1.5.2.2 | CDMS | 2d | 2011-03-23 | 2011-03-24 |  |  | 258d |  |  |  |  |
| 67 | 18.1.1.5.2.3 | CSS | 2d | 2011-03-23 | 2011-03-24 |  |  | 258d |  |  |  |  |
| 68 | 18.1.1.5.2.4 | BWCIF | 2d | 2011-03-23 | 2011-03-24 |  |  | 258d |  |  |  |  |
| 69 | 18.1.1.5.2.5 | VBM | 2d | 2011-03-23 | 2011-03-24 |  |  | 258d |  |  |  |  |
| 70 | 18.1.1.5.2.6 | IFIS | 2d | 2011-03-23 | 2011-03-24 |  |  | 258d |  |  |  |  |
| 71 | 18.1.1.5.2.7 | NPL | 2d | 2011-03-23 | 2011-03-24 |  |  | 258d |  |  |  |  |

Notes:
- 46: This session is already covered. Dates are indicatives only
- 47: This session is already covered. Dates are indicatives only
- 48: This session is already covered. Dates are indicatives only
- 49: This session is already covered. Dates are indicatives only
- 50: This session is already covered. Dates are indicatives only
- 52: This session is already covered. Dates are indicatives only
- 53: This session is already covered. Dates are indicatives only

| ID | WBS | Task | Type | Duration | Start | Finish | Predecessors | Complete | Remaining | Total slack | Free slack | Resources | Work | Actual work |
| --- | --- | --- | --- | --- | --- | --- | --- | --- | --- | --- | --- | --- | --- | --- |
| 72 | 18.1.1.5.3 | **Batch - From Credit Master** |  | 2d | 2011-03-25 | 2011-03-28 | 64 |  |  | 258d | 0d | Lum Wei Kit; Zuraidah | 32h |  |
| 73 | 18.1.1.5.3.1 | BWCIF |  | 2d | 2011-03-25 | 2011-03-28 |  |  |  | 258d |  |  |  |  |
| 74 | 18.1.1.5.3.2 | GDW |  | 2d | 2011-03-25 | 2011-03-28 |  |  |  | 258d |  |  |  |  |
| 75 | 18.1.1.5.3.3 | CDMS |  | 2d | 2011-03-25 | 2011-03-28 |  |  |  | 258d |  |  |  |  |
| 76 | 18.1.1.5.3.4 | BCAS |  | 2d | 2011-03-25 | 2011-03-28 |  |  |  | 258d |  |  |  |  |
| 77 | 18.1.1.5.4 | **Online - From Credit Master** |  | 2d | 2011-03-29 | 2011-03-30 | 72 |  |  | 258d |  | Lum Wei Kit; Zuraidah | 32h |  |
| 78 | 18.1.1.5.4.1 | ILOG RATING |  | 2d | 2011-03-29 | 2011-03-30 |  |  |  | 258d |  |  |  |  |
| 79 | 18.1.1.5.4.2 | BWCIF |  | 2d | 2011-03-29 | 2011-03-30 |  |  |  | 258d |  |  |  |  |
| 80 | 18.1.1.5.4.3 | GRP |  | 2d | 2011-03-29 | 2011-03-30 |  |  |  | 258d |  |  |  |  |
| 81 | 18.1.1.5.4.4 | LES |  | 2d | 2011-03-29 | 2011-03-30 |  |  |  | 258d |  |  |  |  |
| 82 | 18.1.1.5.4.5 | ILOG |  | 2d | 2011-03-29 | 2011-03-30 | 56 |  |  | 258d |  |  |  |  |
| 83 | 18.1.1.6 | **Functional Specs Preparation & Review** |  | 70d? | 2011-01-03 A | 2011-04-08 |  | 58% | 29.49d? | 254d |  |  | 1760.67h | 1175.2h |
| 84 | 18.1.1.6.1 | **Batch 1** |  | 12d | 2011-02-14 A | 2011-03-01 | 31, 30, 28, 29, 27 | 94% | 0.72d | 0d |  |  | 480h | 451.2h |
| 85 | 18.1.1.6.1.1 | UOBCM-IFS-FS008 - Credit Policies |  | 12d | 2011-02-14 A | 2011-03-01 A |  | 100% |  |  |  | Alicia | 96h | 96h |
| 86 | 18.1.1.6.1.2 | UOBCM-IFS-FS011 - Collateral Allocation and Linkage |  | 12d | 2011-02-14 A | 2011-03-01 |  | 85% | 1.8d | 0d |  | Zuraidah | 96h | 81.6h |
| 87 | 18.1.1.6.1.3 | UOBCM-IFS-FS020 - Call Report |  | 12d | 2011-02-14 A | 2011-03-01 A |  | 100% |  |  |  | Adeline | 96h | 96h |
| 88 | 18.1.1.6.1.4 | UOBCM-IFS-FS009 - Executive Summary |  | 12d | 2011-02-14 A | 2011-03-01 |  | 85% | 1.8d | 0d |  | Mellisa | 96h | 81.6h |
| 89 | 18.1.1.6.1.5 | UOBCM-IFS-FS016 - User Administration |  | 12d | 2011-02-14 A | 2011-03-01 A |  | 100% |  |  |  | Alicia | 96h | 96h |
| 90 | 18.1.1.6.2 | **Batch 1 Review** |  | 18d | 2011-03-01 A | 2011-03-25 | 84 | 14% | 15.5d | 0d |  |  | 80h | 40h |
| 91 | 18.1.1.6.2.1 | 1st FS submission | milestone | 0d | 2011-03-01 A | 2011-03-01 A |  | 100% |  |  |  | Vishnu |  |  |
| 92 | 18.1.1.6.2.2 | 1st review by bank |  | 5d | 2011-03-02 A | 2011-03-08 | 91 | 50% | 2.5d | 0d |  | UOB; Alicia | 80h | 40h |
| 93 | 18.1.1.6.2.3 | 1st amendment |  | 9d | 2011-03-09 | 2011-03-21 | 92 |  |  | 0d |  |  |  |  |
| 94 | 18.1.1.6.2.4 | 2nd FS submission | milestone | 0d | 2011-03-21 | 2011-03-21 | 93 |  |  | 0d |  |  |  |  |
| 95 | 18.1.1.6.2.5 | 2nd review by bank |  | 4d | 2011-03-22 | 2011-03-25 | 94 |  |  | 0d |  |  |  |  |
| 96 | 18.1.1.6.2.6 | Sign-off | milestone | 0d | 2011-03-25 | 2011-03-25 | 95 |  |  | 0d |  | UOB |  |  |

Notes:
- 83: There is a delay with ending last date 6 May 2011
- 85: Given to the bank on 1st March 2011
- 86: Given to the bank on 1st March 2011 / Given feedback from bank, documents under ammendment. / ZZ will update the document after discussing the same with Kok Wing to find out what else is required in the document
- 87: Given to the bank on 1st March 2011 / Given feedback from the bank. / Shall advise next submission date
- 88: Given to the bank on 1st March 2011 / Given feedback from bank / Shall advise the next submission date
- 89: Was submitted on 4th March 2011 / Review session is 22nd March by Alicia

| ID | WBS | Task | Type | Duration | Start | Finish | Predecessors | Complete | Remaining | Total slack | Free slack | Constraint | Resources | Work | Actual work |
| --- | --- | --- | --- | --- | --- | --- | --- | --- | --- | --- | --- | --- | --- | --- | --- |
| 97 | 18.1.1.6.3 | **Batch 2** |  | 5d | 2011-02-28 A | 2011-03-04 A | 32, 33, 34, 35, 36, 37 | 100% |  |  |  |  |  | 280h | 280h |
| 98 | 18.1.1.6.3.1 | UOBCM-IFS-FS001 - Prospect Borrower |  | 5d | 2011-02-28 A | 2011-03-04 A |  | 100% |  |  |  |  | Min Keat | 40h | 40h |
| 99 | 18.1.1.6.3.2 | UOBCM-IFS-FS003 - Financial Spreading |  | 5d | 2011-02-28 A | 2011-03-04 A |  | 100% |  |  |  |  | Bollama | 40h | 40h |
| 100 | 18.1.1.6.3.3 | UOBCM-IFS-FS004 - Credit Application |  | 5d | 2011-02-28 A | 2011-03-04 A |  | 100% |  |  |  |  | Adeline | 40h | 40h |
| 101 | 18.1.1.6.3.4 | UOBCM-IFS-FS006 - Collateral Structuring |  | 5d | 2011-02-28 A | 2011-03-04 A |  | 100% |  |  |  |  | Mellisa | 40h | 40h |
| 102 | 18.1.1.6.3.5 | UOBCM-IFS-FS007 - Credit Rating |  | 5d | 2011-02-28 A | 2011-03-04 A |  | 100% |  |  |  |  | Zuraidah | 40h | 40h |
| 103 | 18.1.1.6.3.6 | UOBCM-IFS-FS013 - Credit Approval |  | 5d | 2011-02-28 A | 2011-03-04 A |  | 100% |  |  |  |  | Adeline | 40h | 40h |
| 104 | 18.1.1.6.3.7 | UOBCM-IFS-FS019 - Standard User Features and Functions |  | 5d | 2011-02-28 A | 2011-03-04 A |  | 100% |  |  |  |  | Patricia | 40h | 40h |
| 105 | 18.1.1.6.4 | **Batch 2 Review** |  | 20d | 2011-03-04 A | 2011-04-01 | 97 |  | 20d | 259d |  |  |  |  |  |
| 106 | 18.1.1.6.4.1 | 1st FS submission | milestone | 0d | 2011-03-04 A | 2011-03-04 A |  | 100% |  |  |  |  |  |  |  |
| 107 | 18.1.1.6.4.2 | 1st review by bank |  | 6d | 2011-03-07 | 2011-03-14 | 106 |  |  | 259d | 0d |  |  |  |  |
| 108 | 18.1.1.6.4.3 | 1st amendment |  | 10d | 2011-03-15 | 2011-03-28 | 107 |  |  | 259d | 0d |  |  |  |  |
| 109 | 18.1.1.6.4.4 | 2nd FS submission | milestone | 0d | 2011-03-28 | 2011-03-28 | 108 |  |  | 259d | 0d |  |  |  |  |
| 110 | 18.1.1.6.4.5 | 2nd review by bank |  | 4d | 2011-03-29 | 2011-04-01 | 109 |  |  | 259d | 0d |  |  |  |  |
| 111 | 18.1.1.6.4.6 | Sign-off | milestone | 0d | 2011-04-01 | 2011-04-01 | 110 |  |  | 259d |  |  | UOB |  |  |
| 112 | 18.1.1.6.5 | **Batch 3** |  | 11d | 2011-02-28 A | 2011-03-14 | 37 | 80% | 2.2d | 273d |  |  |  | 520.67h | 396h |
| 113 | 18.1.1.6.5.1 | UOBCM-IFS-FS005 - Facility Structuring |  | 11d | 2011-02-28 A | 2011-03-14 |  | 50% | 5.5d | 273d |  |  | Patricia [50%]; Mellisa [50%] | 80.67h | 44h |
| 114 | 18.1.1.6.5.2 | UOBCM-IFS-FS010 - CAS Printout |  | 11d | 2011-02-28 A | 2011-03-14 A |  | 100% |  |  |  |  | Mellisa | 88h | 88h |
| 115 | 18.1.1.6.5.3 | UOBCM-IFS-FS012 - Approval Routing & Workflow |  | 11d | 2011-02-28 A | 2011-03-14 A |  | 100% |  |  |  |  | Adeline | 88h | 88h |
| 116 | 18.1.1.6.5.4 | UOBCM-IFS-FS002 - Obligor & Aggregation |  | 11d | 2011-02-28 A | 2011-03-14 A |  | 100% |  |  |  |  | Patrick | 88h | 88h |
| 117 | 18.1.1.6.5.5 | UOBCM-IFS-FS015 - System Administration |  | 11d | 2011-02-28 A | 2011-03-14 |  | 50% | 5.5d | 273d |  |  | Mellisa; Bollama | 176h | 88h |
| 118 | 18.1.1.6.6 | **Batch 3 Review** |  | 15d | 2011-03-14 | 2011-04-01 |  |  |  | 259d |  |  |  | 104h |  |
| 119 | 18.1.1.6.6.1 | 1st FS submission |  | 1d | 2011-03-14 | 2011-03-14 |  |  |  | 259d | 0d | start no earlier than 2011-03-14 | Vishnu | 8h |  |
| 120 | 18.1.1.6.6.2 | 1st review by bank |  | 6d | 2011-03-15 | 2011-03-22 | 119 |  |  | 259d | 0d |  | UOB; Alicia | 96h |  |
| 121 | 18.1.1.6.6.3 | 1st amendment |  | 3d | 2011-03-23 | 2011-03-25 | 120 |  |  | 259d | 0d |  |  |  |  |
| 122 | 18.1.1.6.6.4 | 2nd FS submission |  | 1d | 2011-03-28 | 2011-03-28 | 121 |  |  | 259d | 0d |  |  |  |  |
| 123 | 18.1.1.6.6.5 | 2nd review by bank |  | 4d | 2011-03-29 | 2011-04-01 | 122 |  |  | 259d | 0d |  |  |  |  |
| 124 | 18.1.1.6.6.6 | Sign-off | milestone | 0d | 2011-04-01 | 2011-04-01 | 123 |  |  | 259d |  |  | UOB |  |  |

Notes:
- 98: Was given to the bank on 4th March 2011 / Review session is scheduled 14th March - Melissa
- 99: Given to the bank 7th March 2011 / Review date is 28th March by Bollama
- 100: Given to the bank on 7th March 2011 / Review date is 21st March by Adeline
- 101: Was given to the bank on 4th March 2011 / Review date is 17th March by Mellisa
- 102: Submitted on 15th March 2011
- 103: Given to the bank 07th March 2011 / Review date is 23rd March by Adeline
- 104: Given to the bank 07th March 2011 / Review date is 25th March by Patricia but need replacement
- 112: The following was submitted 15th March 2011 / 1. FS0015A - Parameter & Team Maintenance / 2. FS0010 - CAS Print Out / 3. FS0012 - Approval Workflow
- 113: 1. Melissa with take over UOBCM-IFS-FS005 -~ Facility Structuring from Patricia. At current the document is 50% complete. / 2.Target date to submit is EOD 23rd March 2011
- 114: Submitted on 15th march / Conduct of Account section in the CAS Printout fs is left blank intentionally because we are still pending for users to provide us the intended layout
- 115: Submitted 15th March
- 116: Submitted on 15th March 2011
- 117: * ·;; ·;; ·We have split System Administration fs into 2 documents. / ·Parameter & team maintenance (A) / 1Campaign & Facilities maintenance (B) / We will be submitting (B) only after we have gone through the first round of facility structuring fs review with users. This is to minimized the rework effort since campaign & facilities maintenance screens are heavily dependent on the facility structuring fs. / The A was submitted on 15th march / 1. UOBCM-IFS-FS015 -~ System Administration - Campaign & Facilities maintenance (B) will be done by Mellisa. / 2.Target date to deliver this EOD ~30th March 2011

| ID | WBS | Task | Type | Duration | Start | Finish | Predecessors | Complete | Remaining | Total slack | Free slack | Constraint | Resources | Work | Actual work |
| --- | --- | --- | --- | --- | --- | --- | --- | --- | --- | --- | --- | --- | --- | --- | --- |
| 125 | 18.1.1.6.7 | **Batch 4** |  | 8d | 2011-03-14 A | 2011-03-23 | 53 | 6% | 7.53d | 266d |  |  |  | 168h | 8h |
| 126 | 18.1.1.6.7.1 | UOBCM-IFS-FS014 - Post Approval |  | 1d | 2011-03-17 | 2011-03-17 | 51 |  |  | 270d |  |  | Patrick | 8h |  |
| 127 | 18.1.1.6.7.2 | UOBCM-IFS-FS017 - Reports |  | 8d | 2011-03-14 A | 2011-03-23 |  | 6% | 7.5d | 254d | 0d |  | Bollama | 64h | 4h |
| 128 | 18.1.1.6.7.3 | UOBCM-IFS-FS018 - Notification |  | 8d | 2011-03-14 A | 2011-03-23 |  | 6% | 7.5d | 266d |  |  | Bollama [153.3%] | 96h | 4h |
| 129 | 18.1.1.6.8 | **Batch 4 Review** |  | 12d | 2011-03-24 | 2011-04-08 | 127 |  |  | 254d |  |  |  | 72h |  |
| 130 | 18.1.1.6.8.1 | 1st FS submission |  | 1d | 2011-03-24 | 2011-03-24 |  |  |  | 254d | 0d | start no earlier than 2011-03-21 | Vishnu | 8h |  |
| 131 | 18.1.1.6.8.2 | 1st review by bank |  | 4d | 2011-03-25 | 2011-03-30 | 130 |  |  | 254d | 0d |  | UOB; Alicia | 64h |  |
| 132 | 18.1.1.6.8.3 | 1st amendment |  | 3d | 2011-03-31 | 2011-04-04 | 131 |  |  | 254d | 0d |  |  |  |  |
| 133 | 18.1.1.6.8.4 | 2nd FS submission |  | 1d | 2011-04-05 | 2011-04-05 | 132 |  |  | 254d | 0d |  |  |  |  |
| 134 | 18.1.1.6.8.5 | 2nd review by bank |  | 3d | 2011-04-06 | 2011-04-08 | 133 |  |  | 254d | 0d |  |  |  |  |
| 135 | 18.1.1.6.8.6 | Sign-off | milestone | 0d | 2011-04-08 | 2011-04-08 | 134 |  |  | 254d |  |  | UOB |  |  |
| 136 | 18.1.1.6.9 | **Batch 5 - Interface** |  | 1d? | 2011-01-03 | 2011-01-03 |  |  |  | 323d |  |  |  |  |  |
| 137 | 18.1.1.6.9.1 | UOBCM-IFS-FS019 - Interface Specification |  | 1d? | 2011-01-03 | 2011-01-03 |  |  |  | 323d |  |  |  |  |  |
| 138 | 18.1.1.6.10 | **Batch 5 Review** |  | 7d | 2011-03-23 | 2011-03-31 | 55 |  |  | 260d |  |  |  | 56h |  |
| 139 | 18.1.1.6.10.1 | 1st FS submission |  | 1d | 2011-03-23 | 2011-03-23 |  |  |  | 260d | 0d |  | Lum Wei Kit | 8h |  |
| 140 | 18.1.1.6.10.2 | 1st review by bank |  | 2d | 2011-03-24 | 2011-03-25 | 139 |  |  | 260d | 0d |  | UOB | 16h |  |
| 141 | 18.1.1.6.10.3 | 1st amendment |  | 1d | 2011-03-28 | 2011-03-28 | 140 |  |  | 260d | 0d |  | Lum Wei Kit | 8h |  |
| 142 | 18.1.1.6.10.4 | 2nd FS submission |  | 1d | 2011-03-29 | 2011-03-29 | 141 |  |  | 260d | 0d |  | Lum Wei Kit | 8h |  |
| 143 | 18.1.1.6.10.5 | 2nd review by bank |  | 1d | 2011-03-30 | 2011-03-30 | 142 |  |  | 260d | 0d |  | UOB | 8h |  |
| 144 | 18.1.1.6.10.6 | Sign-off |  | 1d | 2011-03-31 | 2011-03-31 | 143 |  |  | 260d |  |  | UOB | 8h |  |
| 145 | 18.2 | **Design Phase** |  | 19d | 2011-03-28 | 2011-04-21 | 90 |  |  | 0d |  |  |  | 176h |  |
| 146 | 18.2.1 | Tech Specs Requirements -UOBCM-IFS-FS020 |  | 10d | 2011-03-28 | 2011-04-08 |  |  |  | 0d |  |  | Lum Wei Kit | 80h |  |
| 147 | 18.2.2 | Tech Specs Submission |  | 1d | 2011-04-11 | 2011-04-11 | 146 |  |  | 0d |  |  | Lum Wei Kit | 8h |  |
| 148 | 18.2.3 | Techinical Design Review Workshop |  | 1d | 2011-04-12 | 2011-04-12 | 147 |  |  | 0d |  |  | Lum Wei Kit | 8h |  |
| 149 | 18.2.4 | Tech Specs Review |  | 3d | 2011-04-13 | 2011-04-15 | 148 |  |  | 0d |  |  | Lum Wei Kit; UOB | 48h |  |
| 150 | 18.2.5 | Tech Specs Revision |  | 3d | 2011-04-18 | 2011-04-20 | 149 |  |  | 0d |  |  | Lum Wei Kit | 24h |  |
| 151 | 18.2.6 | Tech Specs 2nd Submission & Sign Off |  | 1d | 2011-04-21 | 2011-04-21 | 150 |  |  | 0d |  |  | UOB | 8h |  |

Notes:
- 126: This document is broken into: / 1. II maintenance & Account Linking delivery = 24th march 2011 / 2. LO Maintenance = 21st march / 3. Document exception & monitoring = 26th march / 4. Convenants Exception & monitoring = 26th March
- 127: In RFP, reports to be done is only 15 / Current count of Bollama is 100+ / Zuraidah will discuss with the bank seeking them to priotize to only 15
- 128: Pending requirement for financial spreading / Call report module also requires the notification / Bollama to confirm after discussing with Zuraidah
- 140: Preferance will be 5 days
- 146: TABLE OF CONTENTS/ 1.INTRODUCTION6/ 1.1.Scope6/ 1.2.Process by Organization Matrix6/ 2.SYSTEM DESIGN7/ 2.1Solution Considerations7/ 2.1.1Host System Interfaces7/ 2.2Host System8/ 2.2.1Batch Interface8/ 2.2.2Online Interface (XML)9/ 3.FUNCTIONAL REQUIREMENTS10/ 3.1Function Description10/ 3.1.1User & Profile Template Maintenance Module10/ 3.1.2Parameters Management Module10/ 3.1.3Business Setup Module10/ 3.1.4Facility & Facility Group Setup Module10/ 3.1.5Prospect/Borrower Module10/ 3.1.6Group/Group Exposure Module11/ 3.1.7Group/Group Exposure Module11/ 3.1.8Credit Application Summary (CAS) / Credit Memo / Credit Review Module11/ 3.1.9Reports & Notifications Module11/ 3.1.10Post Approval Module11/ 3.1.11Version Management Module11/ 3.1.12Workflow Management Module12/ 3.1.13Event Management Module12/ 3.1.14Document Generation Module12/ 3.1.15Online Interface with Hosts Module12/ 3.1.16Batch Interface with Hosts Module13/ 3.2Formulae/Algorithms13/ 4.INTERFACE REQUIREMENTS14/ 4.1Component Interfaces14/ 4.1.1ILOG Business Rule Engine15/ 4.2Host System Interfaces17/ 4.2.1Inventory of Interfaces (U742)17/ 4.3Interface Description19/ 4.3.1Add New CIF/ Address/ E. Address (3028)19/ 4.3.2Customer Address Maintenance (3003)19/ 4.3.3Customer Electronic Address Maintenance (3007)19/ 4.3.4Customer Inquiry (1002S)19/ 4.3.5Customer Address Inquiry (1006)19/ 4.3.6Customer Blacklist Inquiry (1032/1033)19/ 4.3.7Customer C2C relationship Inquiry (1020)19/ 4.3.8Customer Trade Account Inquiry19/ 4.3.9Customer Overdraft Account Inquiry19/ 4.3.10Customer Loan Account Inquiry20/ 4.3.11PLCE Liabilities/Shared Collateral Inquiry20/ 4.3.12bCAS Liabilities/Shared Collateral Inquiry20/ 4.3.13Customer Exposure Inquiry20/ 4.3.14Group Information Inquiry20/ 4.3.15Stock and Share Counter Update20/ 4.3.16Profitability Report Information Update20/ 4.3.17NPL Account Update20/ 4.3.18Exchange Rate20/ 4.3.19Behavioral Scoring20/ 4.3.20Collateral Data Implementation20/ 4.3.21Collateral Value Update21/ 4.3.22Customer Code Parameter List21/ 4.3.23CTO Code21/ 4.3.24CTO Code Retag21/ 5.TECHNICAL ARCHITECTURE REQUIREMENTS22/ 5.1Technical Environment (logical)22/ 5.1.1Hardware Environment (K135)22/ 5.1.2Network Environment (R130)22/ 5.1.3System Software Environment (K280)22/ 5.2Production Environment (physical, mirror by UAT)22/ 5.2.1Hardware Description22/ 5.2.2Network Description22/ 5.2.3System Software Description22/ 5.3Development Environment (usually a scale down version of production)23/ 5.3.1Hardware Description23/ 5.3.2Network Description23/ 5.3.3System Software Description23/ 5.3.4Development Tools23/ 5.3.5Design and Programming Standards24/ 5.4Application Architecture27/ 5.4.1Application Architecture Level 1 Diagram (U701)29/ 5.4.2Application Flow (T120)30/ 5.4.3Application Access Security31/ 5.4.4Application Audit Log32/ 5.4.5Localization33/ 5.4.6Encryption Key Protection35/ 6.DATABASE DESIGN36/ 6.1Data Model (D040)36/ 6.1.1User36/ 6.1.2Team37/ 6.1.3User Profile38/ 6.1.4Function Access Definition39/ 6.1.5Profile Template40/ 6.1.6Common Code41/ 6.1.7Fee and Charges42/ 6.1.8Exchange Rates43/ 6.1.9Pricings44/ 6.1.10Approval CDL45/ 6.1.11SLA Parameters46/ 6.1.12MAS S3547/ 6.1.13Security Recovery Rate48/ 6.1.14Product49/ 6.1.15Campaign50/ 6.1.16Rating Model51/ 6.1.17Customer - Company52/ 6.1.18Customer - Individual53/ 6.1.19Customer Business Details54/ 6.1.20Customer Relationship Details55/ 6.1.21Financial Statement56/ 6.1.22Simulation CAS57/ 6.1.23Collateral Structure58/ 6.1.24Rating59/ 6.1.25Rating - QLR60/ 6.1.26Rating - DSCR61/ 6.1.27Rating - Report62/ 6.1.28Post Approval Letter of Offer63/ 6.1.29Post Approval Implementation Instruction64/ 6.1.30Post Approval Documentation Check List (DCL)65/ 6.1.31Routing Folder66/ 6.1.32One Obligor Exposure (OOE) Group67/ 6.1.33Account Conduct68/ 6.1.34Call Report69/ 6.1.35Collateral70/ 6.1.36Transaction Definition71/ 6.1.37Transaction72/ 6.1.38Audit Trails73/ 6.2Inventory of Tables / Views and Volume Estimates (D500)74/ 7.INPUT AND OUTPUT DEFINITION75/ 7.1Screens75/ 7.1.1Inventory of Screens (D300)75/ 7.1.2Screen Definition (D310)75/ 7.1.3Screen layout75/ 7.1.4Inventory of Reports (D200)76/ 7.1.5Report Definition (D210)76/ 7.2Transactions77/ 7.2.1Inventory of Transactions (U740)77/ 8.MIGRATION CONSIDERATIONS78/ 8.1Conversion Requirements78/ 9.PROGRAM DESCRIPTION79/ 9.1Program Specifications (T201)79/ 9.1.1Use Case Diagram/Class Diagram/Sequence Diagram79/ 10.TERMINOLOGY/GLOSSARY88

| ID | WBS | Task | Duration | Start | Finish | Predecessors | Total slack | Free slack | Constraint | Resources | Work |
| --- | --- | --- | --- | --- | --- | --- | --- | --- | --- | --- | --- |
| 152 | 18.3 | **Requirement Study (SG Data Conversion)** | 38d | 2011-03-21 | 2011-05-11 |  | 8d | 0d |  |  | 896h |
| 153 | 18.3.1 | **Data Conversion Overview (PLS)** | 8d | 2011-03-21 | 2011-03-30 |  | 11d | 0d |  |  | 72h |
| 154 | 18.3.1.1 | **Customer & Facility Linkage** | 2d | 2011-03-21 | 2011-03-22 |  | 11d | 0d | start no earlier than 2011-03-21 |  |  |
| 155 | 18.3.1.1.1 | Basic Customer Demographic | 2d | 2011-03-21 | 2011-03-22 |  | 11d |  |  |  |  |
| 156 | 18.3.1.1.2 | Facility Structure (loan) | 2d | 2011-03-21 | 2011-03-22 |  | 11d |  |  |  |  |
| 157 | 18.3.1.1.3 | Facility Structure (OD, CC) | 2d | 2011-03-21 | 2011-03-22 |  | 11d |  |  |  |  |
| 158 | 18.3.1.1.4 | Facility Structure (Trade) | 2d | 2011-03-21 | 2011-03-22 |  | 11d |  |  |  |  |
| 159 | 18.3.1.1.5 | Facility Structure (Treasury) | 2d | 2011-03-21 | 2011-03-22 |  | 11d |  |  |  |  |
| 160 | 18.3.1.1.6 | Facility Structure (Factoring) | 2d | 2011-03-21 | 2011-03-22 |  | 11d |  |  |  |  |
| 161 | 18.3.1.1.7 | CAS-FP - Facility relationship | 2d | 2011-03-21 | 2011-03-22 |  | 11d |  |  |  |  |
| 162 | 18.3.1.1.8 | Omnibus/ Sub-limit | 2d | 2011-03-21 | 2011-03-22 |  | 11d |  |  |  |  |
| 163 | 18.3.1.1.9 | Facility Owner and Account Info | 2d | 2011-03-21 | 2011-03-22 |  | 11d |  |  |  |  |
| 164 | 18.3.1.2 | **T&C** | 1d | 2011-03-23 | 2011-03-23 | 154 | 11d | 0d |  | Mellisa; Sujeevan | 16h |
| 165 | 18.3.1.2.1 | Pre/Post Disbursement Conditions | 1d | 2011-03-23 | 2011-03-23 |  | 11d |  |  |  |  |
| 166 | 18.3.1.2.2 | Condition Precedents | 1d | 2011-03-23 | 2011-03-23 |  | 11d |  |  |  |  |
| 167 | 18.3.1.2.3 | Other Conditions | 1d | 2011-03-23 | 2011-03-23 |  | 11d |  |  |  |  |
| 168 | 18.3.1.3 | **Pricing** | 1d | 2011-03-24 | 2011-03-24 | 164 | 11d | 0d |  | Sujeevan | 8h |
| 169 | 18.3.1.3.1 | Pricing (Single Tier) | 1d | 2011-03-24 | 2011-03-24 |  | 11d |  |  |  |  |
| 170 | 18.3.1.3.2 | Pricing (multi-tier by Tenor) | 1d | 2011-03-24 | 2011-03-24 |  | 11d |  |  |  |  |
| 171 | 18.3.1.3.3 | Pricing (multi-tier by amount) | 1d | 2011-03-24 | 2011-03-24 |  | 11d |  |  |  |  |
| 172 | 18.3.1.4 | **Collateral** | 1d | 2011-03-25 | 2011-03-25 | 168 | 11d | 0d |  | Mellisa; Sujeevan | 16h |
| 173 | 18.3.1.4.1 | LM | 1d | 2011-03-25 | 2011-03-25 |  | 11d |  |  |  |  |
| 174 | 18.3.1.4.2 | Guarantee (CG, PG, SBLC, JSG) | 1d | 2011-03-25 | 2011-03-25 |  | 11d |  |  |  |  |
| 175 | 18.3.1.4.3 | Asset Based, Documentation | 1d | 2011-03-25 | 2011-03-25 |  | 11d |  |  |  |  |
| 176 | 18.3.1.4.4 | Insurance & Marketable Securities | 1d | 2011-03-25 | 2011-03-25 |  | 11d |  |  |  |  |
| 177 | 18.3.1.4.5 | Others & Clean | 1d | 2011-03-25 | 2011-03-25 |  | 11d |  |  |  |  |

Notes:
- 168: BA shall be advised

| ID | WBS | Task | Duration | Start | Finish | Predecessors | Total slack | Free slack | Resources | Work |
| --- | --- | --- | --- | --- | --- | --- | --- | --- | --- | --- |
| 178 | 18.3.1.5 | **Collateral & Facility Linkage** | 1d | 2011-03-28 | 2011-03-28 | 172 | 11d | 0d | Mellisa; Sujeevan | 16h |
| 179 | 18.3.1.5.1 | Collateral & Facility linkage/business logic | 1d | 2011-03-28 | 2011-03-28 |  | 11d |  |  |  |
| 180 | 18.3.1.5.2 | Multiple Scenarios & Handling | 1d | 2011-03-28 | 2011-03-28 |  | 11d |  |  |  |
| 181 | 18.3.1.5.3 | Omnibus line, Parent/Child Limit | 1d | 2011-03-28 | 2011-03-28 |  | 11d |  |  |  |
| 182 | 18.3.1.6 | **CAS Structure** | 1d | 2011-03-29 | 2011-03-29 | 178 | 11d | 0d | Mellisa | 8h |
| 183 | 18.3.1.6.1 | CAS Structure (co-borrowing) | 1d | 2011-03-29 | 2011-03-29 |  | 11d |  |  |  |
| 184 | 18.3.1.6.2 | CAS Structure (Shared-line) | 1d | 2011-03-29 | 2011-03-29 |  | 11d |  |  |  |
| 185 | 18.3.1.6.3 | CAS Structure (Clean) | 1d | 2011-03-29 | 2011-03-29 |  | 11d |  |  |  |
| 186 | 18.3.1.7 | **RCG Group** | 1d | 2011-03-30 | 2011-03-30 | 182 | 11d | 0d | Patrick | 8h |
| 187 | 18.3.1.7.1 | RCG groups conversion logic | 1d | 2011-03-30 | 2011-03-30 |  | 11d |  |  |  |
| 188 | 18.3.2 | **Data Conversion Overview (MFA)** | 1d | 2011-03-31 | 2011-03-31 | 186 | 11d | 0d |  |  |
| 189 | 18.3.2.1 | Financial Spreading Template | 1d | 2011-03-31 | 2011-03-31 |  | 11d |  |  |  |
| 190 | 18.3.2.2 | P&L - Income | 1d | 2011-03-31 | 2011-03-31 |  | 11d |  |  |  |
| 191 | 18.3.2.3 | P&L - Expenses | 1d | 2011-03-31 | 2011-03-31 |  | 11d |  |  |  |
| 192 | 18.3.2.4 | Balance Sheet - Asset | 1d | 2011-03-31 | 2011-03-31 |  | 11d |  |  |  |
| 193 | 18.3.2.5 | Balance Sheet - Liability | 1d | 2011-03-31 | 2011-03-31 |  | 11d |  |  |  |
| 194 | 18.3.2.6 | Networth /Owner's Equity | 1d | 2011-03-31 | 2011-03-31 |  | 11d |  |  |  |
| 195 | 18.3.2.7 | Parent/Child Item Mapping Clarification | 1d | 2011-03-31 | 2011-03-31 |  | 11d |  |  |  |
| 196 | 18.3.2.8 | Company vs Consolidated Statement | 1d | 2011-03-31 | 2011-03-31 |  | 11d |  |  |  |
| 197 | 18.3.2.9 | Financial Year Ended, Months Statement Mapping | 1d | 2011-03-31 | 2011-03-31 |  | 11d |  |  |  |
| 198 | 18.3.2.10 | Conversion Approach with Fall Back Plan Discussion | 1d | 2011-03-31 | 2011-03-31 |  | 11d |  |  |  |
| 199 | 18.3.2.11 | Coversion Reports and other matters | 1d | 2011-03-31 | 2011-03-31 |  | 11d |  |  |  |
| 200 | 18.3.3 | **Data Conversion Overview (MRA)** | 1d | 2011-04-01 | 2011-04-01 | 188 | 11d | 0d |  |  |
| 201 | 18.3.3.1 | Archive & historical rating | 1d | 2011-04-01 | 2011-04-01 |  | 11d |  |  |  |

Notes:
- 182: Tech Lead shall be advised
- 186: Tech Lead shall be advised
- 188: Resource shall be advised accordingly by 21st March 2011
- 200: Resource shall be advised by 21st March 2011

| ID | WBS | Task | Duration | Start | Finish | Predecessors | Total slack | Free slack | Constraint | Resources | Work |
| --- | --- | --- | --- | --- | --- | --- | --- | --- | --- | --- | --- |
| 202 | 18.3.4 | **Data conversion Functional Preparation & Review** | 30d | 2011-03-31 | 2011-05-11 |  | 0d |  |  |  | 824h |
| 203 | 18.3.4.1 | CLOS Data Migration_Approach & Strategy Document | 5d | 2011-03-31 | 2011-04-06 |  | 0d |  | must start on 2011-03-31 | Lum Wei Kit | 40h |
| 204 | 18.3.4.2 | **Batch 1 - PLS** | 30d | 2011-03-31 | 2011-05-11 |  | 11d |  |  |  | 312h |
| 205 | 18.3.4.2.1 | File format submission by Integro | 1d | 2011-03-31 | 2011-03-31 | 153 | 11d | 0d |  | Lum Wei Kit | 8h |
| 206 | 18.3.4.2.2 | File format mapping by UOB | 14d | 2011-04-01 | 2011-04-20 | 205 | 11d | 0d |  | UOB | 112h |
| 207 | 18.3.4.2.3 | File format Review | 5d | 2011-04-21 | 2011-04-27 | 206 | 11d | 0d |  | UOB; Lum Wei Kit | 80h |
| 208 | 18.3.4.2.4 | File format Amendment | 5d | 2011-04-28 | 2011-05-04 | 207 | 11d | 0d |  | Lum Wei Kit | 40h |
| 209 | 18.3.4.2.5 | File format 2nd Review | 4d | 2011-05-05 | 2011-05-10 | 208 | 11d | 0d |  | UOB; Lum Wei Kit | 64h |
| 210 | 18.3.4.2.6 | File format sign off | 1d | 2011-05-11 | 2011-05-11 | 209 | 11d |  |  | UOB | 8h |
| 211 | 18.3.4.3 | **Batch 2 - MFA** | 28d | 2011-04-01 | 2011-05-10 |  | 12d |  |  |  | 224h |
| 212 | 18.3.4.3.1 | File format submission by Integro | 1d | 2011-04-01 | 2011-04-01 | 188 | 12d | 0d |  | Lum Wei Kit | 8h |
| 213 | 18.3.4.3.2 | File format mapping by UOB | 14d | 2011-04-04 | 2011-04-21 | 212 | 12d | 0d |  | UOB | 112h |
| 214 | 18.3.4.3.3 | File format Review | 5d | 2011-04-22 | 2011-04-28 | 213 | 12d | 0d |  | UOB | 40h |
| 215 | 18.3.4.3.4 | File format Amendment | 4d | 2011-04-29 | 2011-05-04 | 214 | 12d | 0d |  | Lum Wei Kit | 32h |
| 216 | 18.3.4.3.5 | File format 2nd Review | 3d | 2011-05-05 | 2011-05-09 | 215 | 12d | 0d |  | UOB | 24h |
| 217 | 18.3.4.3.6 | File format sign off | 1d | 2011-05-10 | 2011-05-10 | 216 | 12d |  |  | UOB | 8h |
| 218 | 18.3.4.4 | **Batch 3 - MRA** | 28d | 2011-04-04 | 2011-05-11 |  | 11d |  |  |  | 248h |
| 219 | 18.3.4.4.1 | File format submission by Integro | 1d | 2011-04-04 | 2011-04-04 | 200 | 11d | 0d |  | Lum Wei Kit | 8h |
| 220 | 18.3.4.4.2 | File format mapping by UOB | 14d | 2011-04-05 | 2011-04-22 | 219 | 11d | 0d |  | UOB | 112h |
| 221 | 18.3.4.4.3 | File format Review | 5d | 2011-04-25 | 2011-04-29 | 220 | 11d | 0d |  | UOB | 40h |
| 222 | 18.3.4.4.4 | File format Amendment | 4d | 2011-05-02 | 2011-05-05 | 221 | 11d | 0d |  | Lum Wei Kit | 32h |
| 223 | 18.3.4.4.5 | File format 2nd Review | 3d | 2011-05-06 | 2011-05-10 | 222 | 11d | 0d |  | UOB; Lum Wei Kit | 48h |
| 224 | 18.3.4.4.6 | File format sign off | 1d | 2011-05-11 | 2011-05-11 | 223 | 11d |  |  | UOB | 8h |
| 225 | 18.4 | **Requirements Study (4 Subsidiaries)** | 62d | 2011-05-23 | 2011-08-16 | 21FS+100d | 162d |  |  |  |  |
| 226 | 18.4.1 | **Application Delta** | 19d | 2011-05-23 | 2011-06-16 |  | 162d | 0d |  |  |  |
| 227 | 18.4.1.1 | Team Structure | 0.5d | 2011-05-23 | 2011-05-23 |  | 162d | 0d |  |  |  |
| 228 | 18.4.1.2 | Demographic Info | 1d | 2011-05-23 | 2011-05-24 | 227 | 162d | 0d |  |  |  |
| 229 | 18.4.1.3 | COA, Business, Relationship, Call Report | 1d | 2011-05-24 | 2011-05-25 | 228 | 162d | 0d |  |  |  |
| 230 | 18.4.1.4 | Facility & Data blocks | 1d | 2011-05-25 | 2011-05-26 | 229 | 162d | 0d |  |  |  |
| 231 | 18.4.1.5 | Financial Spreading, Analysis | 1d | 2011-05-26 | 2011-05-27 | 230 | 162d | 0d |  |  |  |
| 232 | 18.4.1.6 | Collateral & Facility Linkage, Allocation | 1d | 2011-05-27 | 2011-05-30 | 231 | 162d | 0d |  |  |  |
| 233 | 18.4.1.7 | One Obligor Exposure & Group Maintenance | 1d | 2011-05-30 | 2011-05-31 | 232 | 162d | 0d |  |  |  |
| 234 | 18.4.1.8 | Prototype Walkthrough 1 | 1d | 2011-05-31 | 2011-06-01 | 233 | 162d | 0d |  |  |  |
| 235 | 18.4.1.9 | Approval Workflow and CDL | 1d | 2011-06-01 | 2011-06-02 | 234 | 162d | 0d |  |  |  |
| 236 | 18.4.1.10 | Rating & Credit Policy | 0.5d | 2011-06-02 | 2011-06-02 | 235 | 162d | 0d |  |  |  |
| 237 | 18.4.1.11 | CAS Printout | 0.5d | 2011-06-03 | 2011-06-03 | 236 | 162d | 0d |  |  |  |
| 238 | 18.4.1.12 | Credit Memo | 0.5d | 2011-06-03 | 2011-06-03 | 237 | 162d | 0d |  |  |  |
| 239 | 18.4.1.13 | Credit Review, Variation, Restructure, Group Review | 1d | 2011-06-06 | 2011-06-06 | 238 | 162d | 0d |  |  |  |
| 240 | 18.4.1.14 | Admin - User Maintenance, Parameter Maintenance | 1d | 2011-06-07 | 2011-06-07 | 239 | 162d | 0d |  |  |  |
| 241 | 18.4.1.15 | Admin - Facility Maintenance | 0.5d | 2011-06-08 | 2011-06-08 | 240 | 162d | 0d |  |  |  |
| 242 | 18.4.1.16 | Prototype Walkthough 2 | 1d | 2011-06-08 | 2011-06-09 | 241 | 162d | 0d |  |  |  |
| 243 | 18.4.1.17 | Post Approval (LD, II, Account Linking) for MY | 0.5d | 2011-06-09 | 2011-06-09 | 242 | 162d | 0d |  |  |  |
| 244 | 18.4.1.18 | Post Approval (LD, II, Account Linking) for TH | 0.5d | 2011-06-10 | 2011-06-10 | 243 | 162d | 0d |  |  |  |
| 245 | 18.4.1.19 | Post Approval (LD, II, Account Linking) for IN | 0.5d | 2011-06-10 | 2011-06-10 | 244 | 162d | 0d |  |  |  |
| 246 | 18.4.1.20 | Post Approval (LD, II, Account Linking) for CN | 0.5d | 2011-06-13 | 2011-06-13 | 245 | 162d | 0d |  |  |  |
| 247 | 18.4.1.21 | Post Approval Consolidation of requirements | 1d | 2011-06-13 | 2011-06-14 | 246 | 162d | 0d |  |  |  |
| 248 | 18.4.1.22 | Post Approval Prototype Consolidation and Walkthrough | 1d | 2011-06-14 | 2011-06-15 | 247 | 162d | 0d |  |  |  |
| 249 | 18.4.1.23 | LO Gen, Documentation | 1d | 2011-06-15 | 2011-06-16 | 248 | 162d | 0d |  |  |  |
| 250 | 18.4.1.24 | Notification | 0.5d | 2011-06-16 | 2011-06-16 | 249 | 162d | 0d |  |  |  |

Notes:
- 203: include date for this delivery of document
- 214: Tech Lead shall be advised
- 216: Tech Lead shall be advised
- 221: Tech Lead shall be advised
- 225: Not planned in the schedule till confirmation frm Karen on 11th April 2011

| ID | WBS | Task | Duration | Start | Finish | Predecessors | Total slack | Free slack | Resources | Work |
| --- | --- | --- | --- | --- | --- | --- | --- | --- | --- | --- |
| 251 | 18.4.2 | **Report Delta** | 3d | 2011-06-17 | 2011-06-21 |  | 202d |  |  |  |
| 252 | 18.4.2.1 | Reports for Admin Module | 1d | 2011-06-17 | 2011-06-17 | 250 | 202d | 0d |  |  |
| 253 | 18.4.2.2 | Reports for RM/RMTL, CA | 1d | 2011-06-20 | 2011-06-20 | 252 | 202d | 0d |  |  |
| 254 | 18.4.2.3 | Reports for Post Approval | 1d | 2011-06-21 | 2011-06-21 | 253 | 202d |  |  |  |
| 255 | 18.4.3 | **Interface Delta** | 13d | 2011-06-17 | 2011-07-05 | 226 | 162d | 0d |  |  |
| 256 | 18.4.3.1 | BWC or its equiv. | 1d | 2011-06-17 | 2011-06-17 |  | 162d | 0d |  |  |
| 257 | 18.4.3.2 | COA (FITAS, RBK, MCL) or its equiv. | 1d | 2011-06-20 | 2011-06-20 | 256 | 162d | 0d |  |  |
| 258 | 18.4.3.3 | CDMS or its equiv. | 1d | 2011-06-21 | 2011-06-21 | 257 | 162d | 0d |  |  |
| 259 | 18.4.3.4 | IFIS, CSS, NPL or its equiv. | 1d | 2011-06-22 | 2011-06-22 | 258 | 162d | 0d |  |  |
| 260 | 18.4.3.5 | ILOG | 1d | 2011-06-23 | 2011-06-23 | 259 | 162d | 0d |  |  |
| 261 | 18.4.3.6 | PLCE, BCAS (SG)+ (TH) or its equiv. | 1d | 2011-06-24 | 2011-06-24 | 260 | 162d | 0d |  |  |
| 262 | 18.4.3.7 | LES, GRP or its equiv. | 1d | 2011-06-27 | 2011-06-27 | 261 | 162d | 0d |  |  |
| 263 | 18.4.3.8 | GDW, SBS, VBM or its equiv. | 1d | 2011-06-28 | 2011-06-28 | 262 | 162d | 0d |  |  |
| 264 | 18.4.3.9 | Single Source approach for Subsidiaries interfaces (implementation plan) | 5d | 2011-06-29 | 2011-07-05 | 263 | 162d |  |  |  |
| 265 | 18.4.4 | **LOS Delta Functional Specification Preparation & Submission** | 30d | 2011-07-06 | 2011-08-16 | 255 | 162d |  |  |  |
| 266 | 18.4.4.1 | LOS Delta Functional Specification Review | 15d | 2011-07-06 | 2011-07-26 |  | 162d | 0d |  |  |
| 267 | 18.4.4.2 | LOS Delta Functional Specification Rework & Final Submission + Report FS Submission | 8d | 2011-07-27 | 2011-08-05 | 266 | 162d | 0d |  |  |
| 268 | 18.4.4.3 | LOS Delta Functional Specification Final Amendment & Sign-off | 7d | 2011-08-08 | 2011-08-16 | 267 | 162d |  |  |  |
| 269 | 18.5 | **Development Phase** | 90d | 2011-04-22 | 2011-08-25 | 145 | 0d |  |  | 1480h |
| 270 | 18.5.1 | **Application Development** | 90d | 2011-04-22 | 2011-08-25 |  | 0d |  | Lum Wei Kit | 720h |
| 271 | 18.5.1.1 | Customer | 90d | 2011-04-22 | 2011-08-25 |  | 0d |  |  |  |
| 272 | 18.5.1.2 | Obligor Group Set up | 90d | 2011-04-22 | 2011-08-25 |  | 0d |  |  |  |
| 273 | 18.5.1.3 | Credit Rating & Structuring | 90d | 2011-04-22 | 2011-08-25 |  | 0d |  |  |  |
| 274 | 18.5.1.4 | Credit Application Process | 90d | 2011-04-22 | 2011-08-25 |  | 0d |  |  |  |
| 275 | 18.5.1.5 | Regulatory & Credit Checks | 90d | 2011-04-22 | 2011-08-25 |  | 0d |  |  |  |
| 276 | 18.5.1.6 | Reports | 90d | 2011-04-22 | 2011-08-25 |  | 0d |  |  |  |
| 277 | 18.5.1.7 | Post Approval | 90d | 2011-04-22 | 2011-08-25 |  | 0d |  |  |  |
| 278 | 18.5.1.8 | Admin & Parameter Set-up | 90d | 2011-04-22 | 2011-08-25 |  | 0d |  |  |  |
| 279 | 18.5.1.9 | Document Management System | 90d | 2011-04-22 | 2011-08-25 |  | 0d |  |  |  |
| 280 | 18.5.1.10 | Interfaces (online/batch), Report Development | 90d | 2011-04-22 | 2011-08-25 |  | 0d |  |  |  |
| 281 | 18.5.1.11 | Unit testing | 90d | 2011-04-22 | 2011-08-25 |  | 0d |  |  |  |

Notes:
- 270: To be expand when we are nearing development stage. / Resource Names shall be updated accordingly as nearing the stage

| ID | WBS | Task | Duration | Start | Finish | Predecessors | Total slack | Free slack | Resources | Work |
| --- | --- | --- | --- | --- | --- | --- | --- | --- | --- | --- |
| 282 | 18.5.2 | **Data Conversion** | 65d | 2011-05-12 | 2011-08-10 | 152 | 11d |  |  | 760h |
| 283 | 18.5.2.1 | Data Conversion Development -Source | 65d | 2011-05-12 | 2011-08-10 |  | 11d |  | UOB | 520h |
| 284 | 18.5.2.2 | Data Conversion Development - Vendor | 30d | 2011-05-12 | 2011-06-22 |  | 46d |  | Integro | 240h |
| 285 | 18.6 | **Testing Preparation** | 30d | 2011-07-08 | 2011-08-18 | 145 | 5d |  | QA | 240h |
| 286 | 18.6.1 | Prepare Test Plan | 30d | 2011-07-08 | 2011-08-18 | 270FF-5d | 5d |  |  |  |
| 287 | 18.7 | **Vendor Inter Testing (Pre SIT)** | 15d | 2011-08-26 | 2011-09-15 | 269, 285 | 0d |  | Integro | 120h |
| 288 | 18.7.1 | Conduct VIT | 15d | 2011-08-26 | 2011-09-15 |  | 0d |  |  |  |
| 289 | 18.8 | **SIT** | 106d | 2011-07-22 | 2011-12-16 | 269FS-25d | 0d |  |  | 4576h |
| 290 | 18.8.1 | **Application SIT** | 106d | 2011-07-22 | 2011-12-16 |  | 0d |  | UOB | 2768h |
| 291 | 18.8.1.1 | **SIT Plan Preparation** | 23d | 2011-07-22 | 2011-08-23 |  | 32d |  | UOB | 232h |
| 292 | 18.8.1.1.1 | Prepare SIT Plan | 5d | 2011-07-22 | 2011-07-28 |  | 32d | 0d | UOB | 40h |
| 293 | 18.8.1.1.2 | Conduct SIT Plan Review Meeting | 1d | 2011-07-29 | 2011-07-29 | 292 | 32d | 0d | UOB | 8h |
| 294 | 18.8.1.1.3 | Determine SIT Test Scope | 3d | 2011-08-01 | 2011-08-03 | 293 | 32d | 0d |  |  |
| 295 | 18.8.1.1.4 | Determine Test Approach | 3d | 2011-08-04 | 2011-08-08 | 294 | 32d | 0d |  |  |
| 296 | 18.8.1.1.5 | SIT Plan Signoff | 1d | 2011-08-09 | 2011-08-09 | 295 | 32d | 0d |  |  |
| 297 | 18.8.1.1.6 | Prepare/Review SIT Test Script | 10d | 2011-08-10 | 2011-08-23 | 296 | 83d |  |  |  |
| 298 | 18.8.1.2 | **Setup SIT Environment** | 10d | 2011-07-22 | 2011-08-04 |  | 96d |  |  | 632h |
| 299 | 18.8.1.2.1 | Hardware delivered and installation | 1d | 2011-07-22 | 2011-07-22 |  | 105d |  | UOB | 8h |
| 300 | 18.8.1.2.2 | Install AIX (2 machine), Disk/ESS Storage setup | 1d | 2011-07-22 | 2011-07-22 |  | 105d |  | UOB | 8h |
| 301 | 18.8.1.2.3 | Setup Server Directories, User Groups & Id Accounts | 5d | 2011-07-22 | 2011-07-28 |  | 101d |  | UOB | 40h |
| 302 | 18.8.1.2.4 | Install Oracle Database (1 machine) | 3d | 2011-07-22 | 2011-07-26 |  | 103d |  | UOB | 24h |
| 303 | 18.8.1.2.5 | Config Oracle Database | 2d | 2011-07-22 | 2011-07-25 |  | 104d |  | UOB | 16h |
| 304 | 18.8.1.2.6 | Security/IT System Password Encryption Setup | 5d | 2011-07-22 | 2011-07-28 |  | 101d |  | UOB | 40h |
| 305 | 18.8.1.2.7 | Install weblogic on apps server | 1d | 2011-07-22 | 2011-07-22 |  | 105d |  | UOB | 8h |
| 306 | 18.8.1.2.8 | Batch Environment Setup: CD Transfer, MQ, Ctrl-M | 10d | 2011-07-22 | 2011-08-04 |  | 96d |  | UOB | 80h |
| 307 | 18.8.1.2.9 | Install other sw as appropriate ( SCM, Tivoli End Point, EMC/BMC, TSM etc) | 1d | 2011-07-22 | 2011-07-22 |  | 105d |  | UOB | 8h |
| 308 | 18.8.1.2.10 | Program Deployment to SIT | 1d | 2011-07-22 | 2011-07-22 |  | 105d |  | Integro | 8h |
| 309 | 18.8.1.2.11 | Hardening on SIT machine | 5d | 2011-07-22 | 2011-07-28 |  | 101d |  | UOB | 40h |
| 310 | 18.8.1.2.12 | Connectivity Test | 1d | 2011-07-22 | 2011-07-22 |  | 105d |  | UOB | 8h |
| 311 | 18.8.1.2.13 | Setup user access right metrix in system for SIT | 10d | 2011-07-22 | 2011-08-04 |  | 96d |  | UOB | 80h |
| 312 | 18.8.1.2.14 | Parameter Setting - Security/IT/Business Admin | 5d | 2011-07-22 | 2011-07-28 |  | 101d |  | UOB | 40h |
| 313 | 18.8.1.2.15 | Site Readiness (Seats, PCs, Networks, Phones) | 1d | 2011-07-22 | 2011-07-22 |  | 105d |  | UOB | 8h |
| 314 | 18.8.1.2.16 | Preparation of SIT Data | 5d | 2011-07-22 | 2011-07-28 |  | 101d |  | UOB | 40h |
| 315 | 18.8.1.2.17 | Setup of SIT IDs | 5d | 2011-07-22 | 2011-07-28 |  | 101d |  | UOB | 40h |
| 316 | 18.8.1.2.18 | Setup MQC Ids | 5d | 2011-07-22 | 2011-07-28 |  | 101d |  | UOB | 40h |
| 317 | 18.8.1.2.19 | Connectivity Tests with Interface Systems | 5d | 2011-07-22 | 2011-07-28 |  | 101d |  | UOB | 40h |
| 318 | 18.8.1.2.20 | Apply Application Security | 5d | 2011-07-22 | 2011-07-28 |  | 101d |  | UOB | 40h |
| 319 | 18.8.1.2.21 | Setup of Control M | 2d | 2011-07-22 | 2011-07-25 |  | 104d |  | UOB | 16h |

Notes:
- 282: Resource shall be advised accordingly as nearing task
- 283: to be done by UOB IT
- 289: 1 month for SIT preparation earlier. SIT testing starts after developement.
- 298: Christopher to revert on items required and number of days required

| ID | WBS | Task | Type | Duration | Start | Finish | Predecessors | Total slack | Free slack | Constraint | Resources | Work |
| --- | --- | --- | --- | --- | --- | --- | --- | --- | --- | --- | --- | --- |
| 320 | 18.8.1.3 | **Conduct SIT** |  | 66d | 2011-09-16 | 2011-12-16 | 287 | 0d |  |  | UOB | 1056h |
| 321 | 18.8.1.3.1 | SIT Cycle 1 |  | 32d | 2011-09-16 | 2011-10-31 |  | 0d |  |  | UOB | 256h |
| 322 | 18.8.1.3.2 | SIT Cycle 2 |  | 33d | 2011-11-01 | 2011-12-15 | 321 | 0d |  |  | UOB | 264h |
| 323 | 18.8.1.3.3 | Update Action Logs on outstanding MQC |  | 1d | 2011-12-16 | 2011-12-16 | 322 | 0d |  |  | UOB | 8h |
| 324 | 18.8.1.3.4 | SIT Signoff | milestone | 0d | 2011-12-16 | 2011-12-16 | 323 | 0d |  |  | UOB |  |
| 325 | 18.8.2 | **Data Conversion SIT** |  | 88d | 2011-08-10 | 2011-12-09 | 296 | 5d |  |  | UOB | 1808h |
| 326 | 18.8.2.1 | Prepare SIT Conv Plan |  | 5d | 2011-08-10 | 2011-08-16 |  | 76d | 0d |  | UOB | 40h |
| 327 | 18.8.2.2 | Conduct SIT Conv Plan Review Meeting |  | 1d | 2011-08-17 | 2011-08-17 | 326 | 76d | 0d |  | UOB | 8h |
| 328 | 18.8.2.3 | Determine SIT Conv Test Scope |  | 2d | 2011-08-18 | 2011-08-19 | 327 | 76d | 0d |  | UOB | 16h |
| 329 | 18.8.2.4 | Determine Conv Test Approach |  | 2d | 2011-08-22 | 2011-08-23 | 328 | 76d | 0d |  | UOB | 16h |
| 330 | 18.8.2.5 | SIT Conv Plan Signoff |  | 1d | 2011-08-24 | 2011-08-24 | 329 | 76d | 0d |  | UOB | 8h |
| 331 | 18.8.2.6 | Setup SIT Conv Environment |  | 3d | 2011-08-25 | 2011-08-29 | 330 | 76d | 0d |  | UOB | 24h |
| 332 | 18.8.2.7 | Prepare/Review SIT Conv Test Script |  | 3d | 2011-08-30 | 2011-09-01 | 331 | 76d |  |  | UOB | 24h |
| 333 | 18.8.2.8 | **Conduct of Conv SIT** |  | 60d | 2011-09-16 | 2011-12-08 | 282, 287 | 5d |  |  | UOB | 960h |
| 334 | 18.8.2.8.1 | SIT Conv Cycle 1 |  | 30d | 2011-09-16 | 2011-10-27 |  | 5d | 0d |  | UOB | 240h |
| 335 | 18.8.2.8.2 | SIT Conv Cycle 2 |  | 30d | 2011-10-28 | 2011-12-08 | 334 | 5d | 0d |  | UOB | 240h |
| 336 | 18.8.2.9 | Update Action Logs on outstanding MQC |  | 1d | 2011-12-09 | 2011-12-09 | 335 | 5d | 0d |  | UOB | 8h |
| 337 | 18.8.2.10 | SIT Conv Signoff | milestone | 0d | 2011-12-09 | 2011-12-09 | 336 | 5d | 0d |  | UOB |  |
| 338 | 18.9 | **UAT** |  | 160d? | 2011-08-10 | 2012-03-20 |  | 7d |  |  |  | 152h |
| 339 | 18.9.1 | **Application UAT** |  | 160d? | 2011-08-10 | 2012-03-20 | 296 | 7d |  |  |  | 152h |
| 340 | 18.9.1.1 | Prepare UAT Plan |  | 5d | 2011-09-19 | 2011-09-23 |  | 94d | 0d | start no earlier than 2011-09-19 |  |  |
| 341 | 18.9.1.2 | Conduct UAT Plan Review Meeting |  | 1d | 2011-09-26 | 2011-09-26 | 340 | 94d | 0d |  |  |  |
| 342 | 18.9.1.3 | Determine UAT Test Scope |  | 5d | 2011-09-27 | 2011-10-03 | 341 | 94d | 0d |  |  |  |
| 343 | 18.9.1.4 | Determine UAT Test Approach |  | 3d | 2011-10-04 | 2011-10-06 | 342 | 94d | 0d |  |  |  |
| 344 | 18.9.1.5 | UAT Plan Signoff |  | 1d | 2011-10-07 | 2011-10-07 | 343 | 94d | 0d |  |  |  |

Notes:
- 320: UOB requires 3 months for SIT
- 325: Requires separate box to run this

| ID | WBS | Task | Duration | Start | Finish | Predecessors | Total slack | Free slack | Resources | Work |
| --- | --- | --- | --- | --- | --- | --- | --- | --- | --- | --- |
| 345 | 18.9.1.6 | **Setup UAT Environment** | 10d | 2011-08-10 | 2011-08-23 |  | 157d |  |  |  |
| 346 | 18.9.1.6.1 | Hardware delivered and installation | 1d | 2011-08-10 | 2011-08-10 |  | 166d |  |  |  |
| 347 | 18.9.1.6.2 | Install AIX (2 machine), Disk/ESS Storage setup | 1d | 2011-08-10 | 2011-08-10 |  | 166d |  |  |  |
| 348 | 18.9.1.6.3 | Setup Server Directories, User Groups & Id Accounts | 5d | 2011-08-10 | 2011-08-16 |  | 162d |  |  |  |
| 349 | 18.9.1.6.4 | Install Oracle Database (1 machine) | 3d | 2011-08-10 | 2011-08-12 |  | 164d |  |  |  |
| 350 | 18.9.1.6.5 | Config Oracle Database | 2d | 2011-08-10 | 2011-08-11 |  | 165d |  |  |  |
| 351 | 18.9.1.6.6 | Security/IT System Password Encryption Setup | 5d | 2011-08-10 | 2011-08-16 |  | 162d |  |  |  |
| 352 | 18.9.1.6.7 | Install weblogic on apps server | 1d | 2011-08-10 | 2011-08-10 |  | 166d |  |  |  |
| 353 | 18.9.1.6.8 | Batch Environment Setup: CD Transfer, MQ, Ctrl-M | 10d | 2011-08-10 | 2011-08-23 |  | 157d |  |  |  |
| 354 | 18.9.1.6.9 | Install other sw as appropriate ( SCM, Tivoli End Point, EMC/BMC, TSM etc) | 10d | 2011-08-10 | 2011-08-23 |  | 157d |  |  |  |
| 355 | 18.9.1.6.10 | Program Deployment to SIT | 1d | 2011-08-10 | 2011-08-10 |  | 166d |  |  |  |
| 356 | 18.9.1.6.11 | Hardening on UAT machine | 5d | 2011-08-10 | 2011-08-16 |  | 162d |  |  |  |
| 357 | 18.9.1.6.12 | Connectivity Test | 1d | 2011-08-10 | 2011-08-10 |  | 166d |  |  |  |
| 358 | 18.9.1.6.13 | Setup user access right metrix in system for UAT | 10d | 2011-08-10 | 2011-08-23 |  | 157d |  |  |  |
| 359 | 18.9.1.6.14 | Parameter Setting - Security/IT/Business Admin | 5d | 2011-08-10 | 2011-08-16 |  | 162d |  |  |  |
| 360 | 18.9.1.7 | Site Readiness (Seats, PCs, Networks, Phones) | 2d | 2011-08-10 | 2011-08-11 |  | 147d | 0d | UOB | 16h |
| 361 | 18.9.1.8 | Preparation of UAT Data | 10d | 2011-08-12 | 2011-08-25 | 360 | 147d | 0d | UOB | 80h |
| 362 | 18.9.1.9 | Setup of UAT IDs | 1d | 2011-08-26 | 2011-08-26 | 361 | 147d | 0d | UOB | 8h |
| 363 | 18.9.1.10 | Setup MQC Ids | 1d | 2011-08-29 | 2011-08-29 | 362 | 147d | 0d | UOB | 8h |
| 364 | 18.9.1.11 | Setup of Control - M | 1d? | 2011-08-30 | 2011-08-30 | 363 | 147d | 0d |  |  |
| 365 | 18.9.1.12 | Connectivity Tests with Interface Systems | 1d | 2011-08-31 | 2011-08-31 | 364 | 147d | 0d | UOB | 8h |
| 366 | 18.9.1.13 | Apply Application Security | 1d | 2011-09-01 | 2011-09-01 | 365 | 147d | 0d | UOB | 8h |
| 367 | 18.9.1.14 | Prepare/Review UAT Test Script | 3d | 2011-09-02 | 2011-09-06 | 366 | 147d |  | UOB | 24h |
| 368 | 18.9.1.15 | **Conduct of UAT** | 67d | 2011-12-19 | 2012-03-20 | 289 | 0d |  |  |  |
| 369 | 18.9.1.15.1 | UAT Cycle 1 | 33d | 2011-12-19 | 2012-02-01 | 324, 325 | 0d |  |  |  |
| 370 | 18.9.1.15.2 | UAT Cycle 2 | 33d | 2012-02-02 | 2012-03-19 | 369 | 0d |  |  |  |
| 371 | 18.9.1.15.3 | Update Action Logs on outstanding MQC | 1d | 2012-03-20 | 2012-03-20 | 370 | 7d |  |  |  |
| 372 | 18.9.1.15.4 | UAT Signoff | 1d | 2012-03-20 | 2012-03-20 | 370 | 4d | 0d |  |  |

Notes:
- 345: Bank to confirm this portion

| ID | WBS | Task | Duration | Start | Finish | Predecessors | Total slack | Free slack |
| --- | --- | --- | --- | --- | --- | --- | --- | --- |
| 373 | 18.9.1.16 | **Data Conversion UAT** | 21d | 2011-08-10 | 2011-09-07 |  | 146d |  |
| 374 | 18.9.1.16.1 | Prepare UAT Conv Plan | 5d | 2011-08-10 | 2011-08-16 |  | 146d | 0d |
| 375 | 18.9.1.16.2 | Conduct UAT Conv Plan Review Meeting | 1d | 2011-08-17 | 2011-08-17 | 374 | 146d | 0d |
| 376 | 18.9.1.16.3 | Determine UAT Conv Test Scope | 5d | 2011-08-18 | 2011-08-24 | 375 | 146d | 0d |
| 377 | 18.9.1.16.4 | Determine Conv Test Approach | 3d | 2011-08-25 | 2011-08-29 | 376 | 146d | 0d |
| 378 | 18.9.1.16.5 | UAT Conv Plan Signoff | 1d | 2011-08-30 | 2011-08-30 | 377 | 146d | 0d |
| 379 | 18.9.1.16.6 | Setup UAT Conv Environment | 3d | 2011-08-31 | 2011-09-02 | 378 | 146d | 0d |
| 380 | 18.9.1.16.7 | Prepare/Review UAT Conv Test Script | 3d | 2011-09-05 | 2011-09-07 | 379 | 146d |  |
| 381 | 18.9.1.17 | **Conduct of Conv UAT** | 50d | 2011-12-12 | 2012-02-17 | 337 | 7d |  |
| 382 | 18.9.1.17.1 | UAT Conv Cycle 1 | 24d | 2011-12-12 | 2012-01-12 |  | 7d | 0d |
| 383 | 18.9.1.17.2 | UAT Conv Cycle 2 | 24d | 2012-01-13 | 2012-02-15 | 382 | 29d | 0d |
| 384 | 18.9.1.17.3 | Update Action Logs on outstanding MQC | 1d | 2012-02-16 | 2012-02-16 | 383 | 29d | 0d |
| 385 | 18.9.1.17.4 | UAT Conv Signoff | 1d | 2012-02-17 | 2012-02-17 | 384 | 29d |  |
| 386 | 18.10 | **Data Conversion Mock Run** | 317d | 2011-01-03 | 2012-03-20 |  | 7d |  |
| 387 | 18.10.1 | Setup MR Conv Environment | 1d | 2011-01-03 | 2011-01-03 |  | 323d |  |
| 388 | 18.10.2 | Restore Production data to MR environment | 1d | 2011-01-03 | 2011-01-03 |  | 323d |  |
| 389 | 18.10.3 | Prepare/Review MR Conv Test Script | 1d | 2011-01-03 | 2011-01-03 |  | 323d |  |
| 390 | 18.10.4 | **Conduct of Conv Mock Run** | 48d | 2012-01-13 | 2012-03-20 |  | 7d |  |
| 391 | 18.10.4.1 | MR Conv Cycle 1 | 3d | 2012-01-13 | 2012-01-17 | 382 | 7d | 0d |
| 392 | 18.10.4.2 | Data Cleansing | 20d | 2012-01-18 | 2012-02-14 | 391 | 7d | 0d |
| 393 | 18.10.4.3 | MR Conv Cycle 2 | 3d | 2012-02-15 | 2012-02-17 | 392 | 7d | 0d |
| 394 | 18.10.4.4 | Data Cleansing | 20d | 2012-02-20 | 2012-03-16 | 393 | 7d | 0d |
| 395 | 18.10.4.5 | Update Action Logs on outstanding MQC | 1d | 2012-03-19 | 2012-03-19 | 394 | 7d | 0d |
| 396 | 18.10.4.6 | MR Conv Signoff | 1d | 2012-03-20 | 2012-03-20 | 395 | 7d |  |

| ID | WBS | Task | Type | Duration | Start | Finish | Predecessors | Total slack | Free slack | Resources | Work |
| --- | --- | --- | --- | --- | --- | --- | --- | --- | --- | --- | --- |
| 397 | 18.11 | **Performance Test** |  | 105d | 2011-10-10 | 2012-03-02 | 344 | 19d |  | UOB | 1532h |
| 398 | 18.11.1 | Prepare Performance Test Plan |  | 1.5d | 2011-10-10 | 2011-10-11 |  | 94d | 0d | UOB | 12h |
| 399 | 18.11.2 | Performance Test Plan Review Meeting |  | 0.5d | 2011-10-11 | 2011-10-11 | 398 | 94d | 0d | UOB; Integro | 8h |
| 400 | 18.11.3 | Determine Perf Test Scope |  | 3d | 2011-10-12 | 2011-10-14 | 399 | 94d | 0d | UOB | 24h |
| 401 | 18.11.4 | Determine Test Approach |  | 1.5d | 2011-10-17 | 2011-10-18 | 400 | 94d | 0d | UOB; Integro | 24h |
| 402 | 18.11.5 | Signoff Performance Test Plan |  | 1d | 2011-10-18 | 2011-10-19 | 401 | 94d | 0d | UOB | 8h |
| 403 | 18.11.6 | Setup Performance Test Environment |  | 5d | 2011-10-19 | 2011-10-26 | 402 | 94d | 0d | UOB | 40h |
| 404 | 18.11.7 | Site Readiness (Seats, PCs, Networks, Phones) |  | 1d | 2011-10-26 | 2011-10-27 | 403 | 94d | 0d | UOB | 8h |
| 405 | 18.11.8 | Ready Performance Test Hardware |  | 5d | 2011-10-27 | 2011-11-03 | 404 | 94d | 0d | UOB | 40h |
| 406 | 18.11.9 | System Software Install |  | 1d | 2011-11-03 | 2011-11-04 | 405 | 94d | 0d | UOB | 8h |
| 407 | 18.11.10 | Creation of Database |  | 2d | 2011-11-04 | 2011-11-08 | 406 | 94d | 0d | UOB | 16h |
| 408 | 18.11.11 | Install of Application Software |  | 1d | 2011-11-08 | 2011-11-09 | 407 | 94d | 0d | UOB | 8h |
| 409 | 18.11.12 | Setup of Test IDs |  | 1d | 2011-11-09 | 2011-11-10 | 408 | 94d | 0d | UOB | 8h |
| 410 | 18.11.13 | Connectivity Tests |  | 1d | 2011-11-10 | 2011-11-11 | 409 | 94d | 0d | UOB | 8h |
| 411 | 18.11.14 | Scripting for Performance Test Scenarios |  | 0.5d | 2011-11-11 | 2011-11-11 | 410 | 94d | 0d | UOB; Integro | 8h |
| 412 | 18.11.15 | Prepare Test Data |  | 5d | 2011-11-14 | 2011-11-18 | 411 | 94d |  | UOB | 40h |
| 413 | 18.11.16 | **Conduct of Performance Test** |  | 21d | 2012-02-02 | 2012-03-01 | 369 | 19d |  | UOB | 408h |
| 414 | 18.11.16.1 | Perf Test Cycle 1 |  | 5d | 2012-02-02 | 2012-02-08 |  | 19d | 0d | UOB | 40h |
| 415 | 18.11.16.2 | Resolve Performance Issues |  | 5d | 2012-02-06 | 2012-02-10 | 414FS-3d | 19d | 0d | Integro | 40h |
| 416 | 18.11.16.3 | Perf Test Cycle 2 |  | 5d | 2012-02-13 | 2012-02-17 | 415 | 19d | 0d | UOB | 40h |
| 417 | 18.11.16.4 | Resolve Performance Issues |  | 5d | 2012-02-15 | 2012-02-21 | 416FS-3d | 19d | 0d | Integro | 40h |
| 418 | 18.11.16.5 | Perf Test Cycle 3 |  | 5d | 2012-02-22 | 2012-02-28 | 417 | 19d | 0d | UOB | 40h |
| 419 | 18.11.16.6 | Resolve Performance Issues |  | 5d | 2012-02-24 | 2012-03-01 | 418FS-3d | 20d |  | Integro | 40h |
| 420 | 18.11.17 | Prepare Perf Test Report |  | 3d | 2012-02-29 | 2012-03-02 | 418 | 19d | 0d | UOB | 24h |
| 421 | 18.11.18 | Signoff Perf Test | milestone | 0d | 2012-03-02 | 2012-03-02 | 420 | 19d |  | UOB |  |

Notes:
- 397: Integro to provide bench mark based on baseline version for planning purposes

| ID | WBS | Task | Duration | Start | Finish | Predecessors | Total slack | Free slack | Deadline | Resources | Work |
| --- | --- | --- | --- | --- | --- | --- | --- | --- | --- | --- | --- |
| 422 | 18.12 | **Training** | 324d | 2011-01-03 | 2012-03-29 |  | 0d |  |  |  | 552h |
| 423 | 18.12.1 | Prepare/Review Training Plan | 5d | 2011-01-03 | 2011-01-07 |  | 43d | 0d | 2011-03-09 | Integro | 40h |
| 424 | 18.12.2 | Signoff Training Plan | 1d | 2011-01-10 | 2011-01-10 | 423 | 288d | 0d |  | Integro | 8h |
| 425 | 18.12.3 | Prepare User Manual | 30d | 2011-01-11 | 2011-02-21 | 424 | 288d |  |  | Integro | 240h |
| 426 | 18.12.4 | Prepare Training Materials | 10d | 2011-01-10 | 2011-01-21 | 423 | 309d |  |  | Integro | 80h |
| 427 | 18.12.5 | Book Training Facilities | 5d | 2011-01-10 | 2011-01-14 | 423 | 314d |  |  | Integro | 40h |
| 428 | 18.12.6 | Workout Training Schedule | 5d | 2011-01-10 | 2011-01-14 | 423 | 314d |  |  | UOB; Integro | 80h |
| 429 | 18.12.7 | Conduct of User Training | 8d | 2012-03-20 | 2012-03-29 | 370 | 0d |  |  | Integro | 64h |
| 430 | 18.13 | **Deployment** | 1d | 2012-03-21 | 2012-03-21 | 372 | 4d | 0d |  | UOB | 160h |
| 431 | 18.13.1 | **Deployment Preparation** | 1d | 2012-03-21 | 2012-03-21 |  | 4d |  |  | UOB | 48h |
| 432 | 18.13.1.1 | Prepare/Review Rollout Plan | 1d | 2012-03-21 | 2012-03-21 |  | 4d |  |  | UOB | 8h |
| 433 | 18.13.1.2 | Signoff Rollout Plan | 1d | 2012-03-21 | 2012-03-21 |  | 4d |  |  | UOB | 8h |
| 434 | 18.13.1.3 | Prepare deployment checklist & cutover-hour-by-hour WBS | 1d | 2012-03-21 | 2012-03-21 |  | 4d |  |  | UOB | 8h |
| 435 | 18.13.1.4 | Brief IT help desk & IT Ops & CPM | 1d | 2012-03-21 | 2012-03-21 |  | 4d |  |  | UOB | 8h |
| 436 | 18.13.1.5 | Brief all stakehokders on the cutover acitivities and responsibilities | 1d | 2012-03-21 | 2012-03-21 |  | 4d |  |  | UOB | 8h |
| 437 | 18.13.2 | **Setup Prod Environment** | 1d | 2012-03-21 | 2012-03-21 |  | 4d |  |  | UOB | 104h |
| 438 | 18.13.2.1 | Hardware delivered and installation | 1d | 2012-03-21 | 2012-03-21 |  | 4d |  |  | UOB | 8h |
| 439 | 18.13.2.2 | Install AIX (2 machine), Disk/ESS Storage setup | 1d | 2012-03-21 | 2012-03-21 |  | 4d |  |  | UOB | 8h |
| 440 | 18.13.2.3 | Setup Server Directories, User Groups & Id Accounts | 1d | 2012-03-21 | 2012-03-21 |  | 4d |  |  | UOB | 8h |
| 441 | 18.13.2.4 | Install Oracle Database (1 machine) | 1d | 2012-03-21 | 2012-03-21 |  | 4d |  |  | UOB | 8h |
| 442 | 18.13.2.5 | Config Oracle Database | 1d | 2012-03-21 | 2012-03-21 |  | 4d |  |  | UOB | 8h |
| 443 | 18.13.2.6 | Security/IT System Password Encryption Setup | 1d | 2012-03-21 | 2012-03-21 |  | 4d |  |  | UOB | 8h |
| 444 | 18.13.2.7 | Install weblogic on apps server | 1d | 2012-03-21 | 2012-03-21 |  | 4d |  |  | UOB | 8h |
| 445 | 18.13.2.8 | Batch Environment Setup: CD Transfer, MQ, Ctrl-M | 1d | 2012-03-21 | 2012-03-21 |  | 4d |  |  | UOB | 8h |
| 446 | 18.13.2.9 | Install other sw as appropriate ( SCM, Tivoli End Point, EMC/BMC, TSM etc) | 1d | 2012-03-21 | 2012-03-21 |  | 4d |  |  | UOB | 8h |
| 447 | 18.13.2.10 | Hardening on SIT machine | 1d | 2012-03-21 | 2012-03-21 |  | 4d |  |  | UOB | 8h |
| 448 | 18.13.2.11 | Connectivity Test | 1d | 2012-03-21 | 2012-03-21 |  | 4d |  |  | UOB | 8h |
| 449 | 18.13.2.12 | Parameter Setting - Security/IT/Business Admin | 1d | 2012-03-21 | 2012-03-21 |  | 4d |  |  | UOB | 8h |

Notes:
- 430: Deployment preparation is 2 weeks / Setup enviroment is 1 month

| ID | WBS | Task | Duration | Start | Finish | Predecessors | Total slack | Free slack | Resources | Work |
| --- | --- | --- | --- | --- | --- | --- | --- | --- | --- | --- |
| 450 | 18.14 | **DR Test** | 1d? | 2012-03-22 | 2012-03-22 | 430 | 4d | 0d | UOB | 24h |
| 451 | 18.14.1 | Prepare DR Test Plan | 1d? | 2012-03-22 | 2012-03-22 |  | 4d |  |  |  |
| 452 | 18.14.2 | DR Test Plan Review Meeting | 0.5d? | 2012-03-22 | 2012-03-22 |  | 4.5d |  | UOB; Integro | 8h |
| 453 | 18.14.3 | identify DR Test Scope | 1d? | 2012-03-22 | 2012-03-22 |  | 4d |  |  |  |
| 454 | 18.14.4 | Determine schedule | 1d? | 2012-03-22 | 2012-03-22 |  | 4d |  |  |  |
| 455 | 18.14.5 | Determine Test Approach | 1d? | 2012-03-22 | 2012-03-22 |  | 4d |  |  |  |
| 456 | 18.14.6 | Determine Resource | 1d? | 2012-03-22 | 2012-03-22 |  | 4d |  |  |  |
| 457 | 18.14.7 | Signoff DR Test Plan | 1d? | 2012-03-22 | 2012-03-22 |  | 4d |  |  |  |
| 458 | 18.14.8 | Setup DR Test Environment | 1d? | 2012-03-22 | 2012-03-22 |  | 4d |  |  |  |
| 459 | 18.14.9 | Ready DR Test Hardware | 1d? | 2012-03-22 | 2012-03-22 |  | 4d |  |  |  |
| 460 | 18.14.10 | System Software Install | 1d? | 2012-03-22 | 2012-03-22 |  | 4d |  |  |  |
| 461 | 18.14.11 | Creation of Database | 1d? | 2012-03-22 | 2012-03-22 |  | 4d |  |  |  |
| 462 | 18.14.12 | Install of Application Software | 1d? | 2012-03-22 | 2012-03-22 |  | 4d |  |  |  |
| 463 | 18.14.13 | Setup of DR Test Ds | 1d? | 2012-03-22 | 2012-03-22 |  | 4d |  |  |  |
| 464 | 18.14.14 | Connectivity Tests | 1d? | 2012-03-22 | 2012-03-22 |  | 4d |  |  |  |
| 465 | 18.14.15 | Prepare DR Test Data | 1d? | 2012-03-22 | 2012-03-22 |  | 4d |  |  |  |
| 466 | 18.14.16 | Prepare DR Procedure | 1d? | 2012-03-22 | 2012-03-22 |  | 4d |  |  |  |
| 467 | 18.14.17 | Conduct of DR Test | 1d? | 2012-03-22 | 2012-03-22 |  | 4d |  |  |  |
| 468 | 18.14.18 | Fix any issues reported for DR | 1d? | 2012-03-22 | 2012-03-22 |  | 4d |  | Integro | 8h |
| 469 | 18.14.19 | Prepare DR Test Report | 1d? | 2012-03-22 | 2012-03-22 |  | 4d |  |  |  |
| 470 | 18.14.20 | Prepare DR Doc | 1d? | 2012-03-22 | 2012-03-22 |  | 4d |  |  |  |
| 471 | 18.14.21 | Signoff DR Docs | 1d? | 2012-03-22 | 2012-03-22 |  | 4d |  |  |  |
| 472 | 18.15 | **Cutover Day** | 1d? | 2012-03-23 | 2012-03-23 | 450 | 4d |  | UOB | 8h |
| 473 | 18.15.1 | Create table, schema, update tables in DB server | 1d? | 2012-03-23 | 2012-03-23 |  | 4d |  |  |  |
| 474 | 18.15.2 | Deploy & Start Application | 1d? | 2012-03-23 | 2012-03-23 |  | 4d |  |  |  |
| 475 | 18.15.3 | Admin IS create user ids | 1d? | 2012-03-23 | 2012-03-23 |  | 4d |  |  |  |
| 476 | 18.15.4 | Conversion verification | 1d? | 2012-03-23 | 2012-03-23 |  | 4d |  |  |  |
| 477 | 18.15.5 | Check conversion reports | 1d? | 2012-03-23 | 2012-03-23 |  | 4d |  |  |  |
| 478 | 18.15.6 | Conduct Pre-live test | 1d? | 2012-03-23 | 2012-03-23 |  | 4d |  |  |  |
| 479 | 18.15.7 | Decide Go / No Go - Obtain Cutver Signoff | 1d? | 2012-03-23 | 2012-03-23 |  | 4d |  |  |  |
| 480 | 18.15.8 | System Live | 1d? | 2012-03-23 | 2012-03-23 |  | 4d |  |  |  |

Notes:
- 450: UOB IT to update
- 472: UOB to update

| ID | WBS | Task | Duration | Start | Finish | Predecessors | Total slack | Free slack |
| --- | --- | --- | --- | --- | --- | --- | --- | --- |
| 482 | 18.16 | **Interface** | 3d? | 2011-03-31 | 2011-04-04 | 54 | 258d |  |
| 483 | 18.16.1 | **UOBCM-IFS-FS019 - Interface Specification** | 2d? | 2011-03-31 | 2011-04-01 |  | 258d |  |
| 484 | 18.16.1.1 | **Design** | 1d? | 2011-03-31 | 2011-03-31 |  | 260d |  |
| 485 | 18.16.1.1.1 | 1st FS submission | 1d? | 2011-03-31 | 2011-03-31 |  | 260d |  |
| 486 | 18.16.1.1.2 | 1st review by bank | 1d? | 2011-03-31 | 2011-03-31 |  | 260d |  |
| 487 | 18.16.1.1.3 | 1st amendment | 1d? | 2011-03-31 | 2011-03-31 |  | 260d |  |
| 488 | 18.16.1.1.4 | 2nd FS submission | 1d? | 2011-03-31 | 2011-03-31 |  | 260d |  |
| 489 | 18.16.1.1.5 | 2nd review by bank | 1d? | 2011-03-31 | 2011-03-31 |  | 260d |  |
| 490 | 18.16.1.1.6 | Sign-off | 1d? | 2011-03-31 | 2011-03-31 |  | 260d |  |
| 491 | 18.16.1.2 | **Development** | 1d? | 2011-03-31 | 2011-03-31 |  | 258d | 0d |
| 492 | 18.16.1.2.1 | **Source** | 1d? | 2011-03-31 | 2011-03-31 |  | 258d |  |
| 493 | 18.16.1.2.1.1 | Task 1 | 1d? | 2011-03-31 | 2011-03-31 |  | 258d |  |
| 494 | 18.16.1.2.1.2 | Task 2 | 1d? | 2011-03-31 | 2011-03-31 |  | 258d |  |
| 495 | 18.16.1.2.1.3 | Task 3 | 1d? | 2011-03-31 | 2011-03-31 |  | 258d |  |
| 496 | 18.16.1.2.2 | **Vendor** | 1d? | 2011-03-31 | 2011-03-31 |  | 258d |  |
| 497 | 18.16.1.2.2.1 | Task 1 | 1d? | 2011-03-31 | 2011-03-31 |  | 258d |  |
| 498 | 18.16.1.2.2.2 | Task 2 | 1d? | 2011-03-31 | 2011-03-31 |  | 258d |  |
| 499 | 18.16.1.2.2.3 | Task 3 | 1d? | 2011-03-31 | 2011-03-31 |  | 258d |  |
| 500 | 18.16.1.3 | **SIT** | 1d? | 2011-04-01 | 2011-04-01 | 491 | 258d | 0d |
| 501 | 18.16.1.3.1 | Task 1 | 1d? | 2011-04-01 | 2011-04-01 |  | 258d |  |
| 502 | 18.16.1.3.2 | Task 2 | 1d? | 2011-04-01 | 2011-04-01 |  | 258d |  |
| 503 | 18.16.1.3.3 | Task 3 | 1d? | 2011-04-01 | 2011-04-01 |  | 258d |  |
| 504 | 18.16.2 | UAT | 1d? | 2011-04-04 | 2011-04-04 | 500 | 258d |  |
