Schedule from MS Project, 2011-01-03 to 2012-03-30, A marks actual dates.
INTEGRO TECHNOLOGIES

## Calendars

- Standard: Mon-Fri 08:00-12:00, 13:00-17:00; Sat-Sun off.

## Resources

| Resource |
| --- |
| DEV1 |
| DEV2 |
| DEV3 |
| DEV4 |
| DEV5 |
| DEV6 |
| DEV7 |
| DEV8 |
| DEV9 |
| DEV10 |
| DEV11 |
| DEV12 |
| UOB |
| Integro |
| I |
| Intego |
| Vishnu |
| Alicia |
| Patricia |
| patrick |
| Mellisa |
| Adeline |
| Bollama |
| bolllam |
| bollaman |
| MK |
| Sujeevan |

## Schedule

| ID | WBS | Task | Type | Duration | Start | Finish | Predecessors | Complete | Remaining | Total slack | Free slack | Work | Actual work |
| --- | --- | --- | --- | --- | --- | --- | --- | --- | --- | --- | --- | --- | --- |
| 1 | 1 | Kick-off | milestone | 0d | 2011-01-03 | 2011-01-03 |  |  |  | 163d | 0d |  |  |
| 2 | 2 | **Corporate Loan Origination System (Phase 1)** |  | 325d? | 2011-01-03 A | 2012-03-30 |  | 12% | 286.23d? | 0d |  | 7044h | 391.2h |
| 3 | 2.1 | **Requirement Study Phase** |  | 70d | 2011-01-03 A | 2011-04-08 | 1 | 65% | 24.63d | 255d |  | 952h | 391.2h |
| 4 | 2.1.1 | **Requirement Study (LOS SG)** |  | 70d | 2011-01-03 A | 2011-04-08 |  | 65% | 24.63d | 255d |  | 952h | 391.2h |
| 5 | 2.1.1.1 | **Origination** |  | 40d | 2011-01-03 A | 2011-02-25 A |  | 100% |  |  |  |  |  |
| 6 | 2.1.1.1.1 | Systems and Processes Overview |  | 2d | 2011-01-03 A | 2011-01-04 A |  | 100% |  |  |  |  |  |
| 7 | 2.1.1.1.2 | RM Team Structure |  | 8d | 2011-01-05 A | 2011-01-14 A | 6 | 100% |  |  |  |  |  |
| 8 | 2.1.1.1.3 | Customer Information, Call report |  | 5d | 2011-01-17 A | 2011-01-21 A | 7 | 100% |  |  |  |  |  |
| 9 | 2.1.1.1.4 | CAS Generation |  | 5d | 2011-01-24 A | 2011-01-28 A | 8 | 100% |  |  |  |  |  |
| 10 | 2.1.1.1.5 | Collateral Allocation Clarification |  | 5d | 2011-01-31 A | 2011-02-04 A | 9 | 100% |  |  |  |  |  |
| 11 | 2.1.1.1.6 | Credit Policy (S35, S27, Credit Exceptions) |  | 5d | 2011-02-07 A | 2011-02-11 A | 10 | 100% |  |  |  |  |  |
| 12 | 2.1.1.1.7 | Prospecting |  | 5d | 2011-01-17 A | 2011-01-21 A | 7 | 100% |  |  |  |  |  |
| 13 | 2.1.1.1.8 | Financial Spreading & Workflow |  | 5d | 2011-01-24 A | 2011-01-28 A | 12 | 100% |  |  |  |  |  |
| 14 | 2.1.1.1.9 | Credit Application, Approval Workflow |  | 5d | 2011-01-31 A | 2011-02-04 A | 13 | 100% |  |  |  |  |  |
| 15 | 2.1.1.1.10 | Collateral/ Facility Linkage & Allocation |  | 5d | 2011-02-07 A | 2011-02-11 A | 14 | 100% |  |  |  |  |  |
| 16 | 2.1.1.1.11 | Credit Rating and Financial Analysis |  | 5d | 2011-02-14 A | 2011-02-18 A | 15 | 100% |  |  |  |  |  |
| 17 | 2.1.1.1.12 | Credit Approval |  | 5d | 2011-02-21 A | 2011-02-25 A | 16 | 100% |  |  |  |  |  |
| 18 | 2.1.1.1.13 | One Obligor Exposure |  | 10d | 2011-01-03 A | 2011-01-14 A |  | 100% |  |  |  |  |  |
| 19 | 2.1.1.1.14 | DSCR/ FRR Calculator, Pre-Qualification activities |  | 10d | 2011-01-03 A | 2011-01-14 A |  | 100% |  |  |  |  |  |
| 20 | 2.1.1.1.15 | Group Maintenance & Management |  | 10d | 2011-01-03 A | 2011-01-14 A |  | 100% |  |  |  |  |  |
| 21 | 2.1.1.1.16 | Post Approval Workflow |  | 10d | 2011-01-03 A | 2011-01-14 A |  | 100% |  |  |  |  |  |
| 22 | 2.1.1.1.17 | Account Linking |  | 10d | 2011-01-03 A | 2011-01-14 A |  | 100% |  |  |  |  |  |
| 23 | 2.1.1.1.18 | Facility |  | 10d | 2011-01-03 A | 2011-01-14 A |  | 100% |  |  |  |  |  |
| 24 | 2.1.1.1.19 | Credit Memo, Credit Review & Credit Variation |  | 10d | 2011-01-03 A | 2011-01-14 A |  | 100% |  |  |  |  |  |

| ID | WBS | Task | Type | Duration | Start | Finish | Predecessors | Complete | Remaining | Total slack | Free slack | Constraint | Resources | Work | Actual work |
| --- | --- | --- | --- | --- | --- | --- | --- | --- | --- | --- | --- | --- | --- | --- | --- |
| 25 | 2.1.1.2 | **Post Approval** |  | 15d | 2011-02-28 | 2011-03-18 | 5 |  |  | 265d | 0d |  |  |  |  |
| 26 | 2.1.1.2.1 | Documentation Module & Maintenance |  | 5d | 2011-02-28 | 2011-03-04 |  |  |  | 275d |  |  |  |  |  |
| 27 | 2.1.1.2.2 | LO Maintenance |  | 5d | 2011-02-28 | 2011-03-04 |  |  |  | 275d |  |  |  |  |  |
| 28 | 2.1.1.2.3 | Document Exception & Monitoring |  | 5d | 2011-02-28 | 2011-03-04 |  |  |  | 275d |  |  |  |  |  |
| 29 | 2.1.1.2.4 | Covenants Exception & Monitoring |  | 5d | 2011-02-28 | 2011-03-04 |  |  |  | 275d |  |  |  |  |  |
| 30 | 2.1.1.2.5 | Post-approval Monitoring + Escalation Rules |  | 5d | 2011-02-28 | 2011-03-04 |  |  |  | 275d |  |  |  |  |  |
| 31 | 2.1.1.2.6 | Clarification session |  | 2d | 2011-03-17 | 2011-03-18 |  |  |  | 265d | 0d | start no earlier than 2011-03-17 |  |  |  |
| 32 | 2.1.1.3 | Notification |  | 7d | 2011-03-03 A | 2011-03-11 A |  | 100% |  |  |  |  |  |  |  |
| 33 | 2.1.1.4 | Reporting |  | 7d | 2011-03-03 A | 2011-03-11 A |  | 100% |  |  |  |  |  |  |  |
| 34 | 2.1.1.5 | **Interfaces** |  | 5d | 2011-03-21 | 2011-03-25 | 25 |  |  | 265d |  |  |  |  |  |
| 35 | 2.1.1.5.1 | BWC, CDMS, FITAS, RBK, IFIS, CSS, MCL, NPL |  | 5d | 2011-03-21 | 2011-03-25 |  |  |  | 265d |  |  |  |  |  |
| 36 | 2.1.1.5.2 | ILOG |  | 5d | 2011-03-21 | 2011-03-25 |  |  |  | 265d |  |  |  |  |  |
| 37 | 2.1.1.5.3 | PLCE, BCAS (SG,MY), BCAS (TH) |  | 5d | 2011-03-21 | 2011-03-25 |  |  |  | 265d |  |  |  |  |  |
| 38 | 2.1.1.5.4 | LES, GRP |  | 5d | 2011-03-21 | 2011-03-25 |  |  |  | 265d |  |  |  |  |  |
| 39 | 2.1.1.5.5 | GDW, SBS, VBM, Fermat |  | 5d | 2011-03-21 | 2011-03-25 |  |  |  | 265d |  |  |  |  |  |
| 40 | 2.1.1.6 | **Functional Specs Preparation & Review** |  | 40d | 2011-02-14 A | 2011-04-08 |  | 57% | 17d | 255d |  |  |  | 952h | 391.2h |
| 41 | 2.1.1.6.1 | **Batch 1** |  | 12d | 2011-02-14 A | 2011-03-01 | 11, 10, 8, 9, 7 | 94% | 0.72d | 0d |  |  |  |  |  |
| 42 | 2.1.1.6.1.1 | UOBCM-IFS-FS008 - Credit Policies |  | 12d | 2011-02-14 A | 2011-03-01 A |  | 100% |  |  |  |  |  |  |  |
| 43 | 2.1.1.6.1.2 | UOBCM-IFS-FS011 - Collateral Allocation and Linkage |  | 12d | 2011-02-14 A | 2011-03-01 |  | 85% | 1.8d | 0d |  |  |  |  |  |
| 44 | 2.1.1.6.1.3 | UOBCM-IFS-FS020 - Call Report |  | 12d | 2011-02-14 A | 2011-03-01 A |  | 100% |  |  |  |  |  |  |  |
| 45 | 2.1.1.6.1.4 | UOBCM-IFS-FS009 - Executive Summary |  | 12d | 2011-02-14 A | 2011-03-01 |  | 85% | 1.8d | 0d |  |  |  |  |  |
| 46 | 2.1.1.6.1.5 | UOBCM-IFS-FS016 - User Administration |  | 12d | 2011-02-14 A | 2011-03-01 A |  | 100% |  |  |  |  |  |  |  |
| 47 | 2.1.1.6.2 | **Batch 1 Review** |  | 18d | 2011-03-01 A | 2011-03-25 | 41 | 14% | 15.5d | 0d |  |  |  | 80h | 40h |
| 48 | 2.1.1.6.2.1 | 1st FS submission | milestone | 0d | 2011-03-01 A | 2011-03-01 A |  | 100% |  |  |  |  | Vishnu |  |  |
| 49 | 2.1.1.6.2.2 | 1st review by bank |  | 5d | 2011-03-02 A | 2011-03-08 | 48 | 50% | 2.5d | 0d |  |  | UOB; Alicia | 80h | 40h |
| 50 | 2.1.1.6.2.3 | 1st amendment |  | 9d | 2011-03-09 | 2011-03-21 | 49 |  |  | 0d |  |  |  |  |  |
| 51 | 2.1.1.6.2.4 | 2nd FS submission | milestone | 0d | 2011-03-21 | 2011-03-21 | 50 |  |  | 0d |  |  |  |  |  |
| 52 | 2.1.1.6.2.5 | 2nd review by bank |  | 4d | 2011-03-22 | 2011-03-25 | 51 |  |  | 0d |  |  |  |  |  |
| 53 | 2.1.1.6.2.6 | Sign-off | milestone | 0d | 2011-03-25 | 2011-03-25 | 52 |  |  | 0d |  |  | UOB |  |  |

Notes:
- 43: Given feedback from bank, documents under ammendment. Wll advise target release date
- 45: Given feedback from bank, documents under ammendment. Wll advise target release date

| ID | WBS | Task | Type | Duration | Start | Finish | Predecessors | Complete | Remaining | Total slack | Free slack | Constraint | Resources | Work | Actual work |
| --- | --- | --- | --- | --- | --- | --- | --- | --- | --- | --- | --- | --- | --- | --- | --- |
| 54 | 2.1.1.6.3 | **Batch 2** |  | 5d | 2011-02-28 A | 2011-03-04 A | 12, 13, 14, 15, 16, 17 | 100% |  |  |  |  |  |  |  |
| 55 | 2.1.1.6.3.1 | UOBCM-IFS-FS001 - Prospect Borrower |  | 5d | 2011-02-28 A | 2011-03-04 A |  | 100% |  |  |  |  |  |  |  |
| 56 | 2.1.1.6.3.2 | UOBCM-IFS-FS003 - Financial Spreading |  | 5d | 2011-02-28 A | 2011-03-04 A |  | 100% |  |  |  |  |  |  |  |
| 57 | 2.1.1.6.3.3 | UOBCM-IFS-FS004 - Credit Application |  | 5d | 2011-02-28 A | 2011-03-04 A |  | 100% |  |  |  |  |  |  |  |
| 58 | 2.1.1.6.3.4 | UOBCM-IFS-FS006 - Collateral Structuring |  | 5d | 2011-02-28 A | 2011-03-04 A |  | 100% |  |  |  |  |  |  |  |
| 59 | 2.1.1.6.3.5 | UOBCM-IFS-FS007 - Credit Rating |  | 5d | 2011-02-28 A | 2011-03-04 A |  | 100% |  |  |  |  |  |  |  |
| 60 | 2.1.1.6.3.6 | UOBCM-IFS-FS013 - Credit Approval |  | 5d | 2011-02-28 A | 2011-03-04 A |  | 100% |  |  |  |  |  |  |  |
| 61 | 2.1.1.6.3.7 | UOBCM-IFS-FS019 - Standard User Features and Functions |  | 5d | 2011-02-28 A | 2011-03-04 A |  | 100% |  |  |  |  |  |  |  |
| 62 | 2.1.1.6.4 | **Batch 2 Review** |  | 20d | 2011-03-04 A | 2011-04-01 | 54 |  | 20d | 260d |  |  |  |  |  |
| 63 | 2.1.1.6.4.1 | 1st FS submission | milestone | 0d | 2011-03-04 A | 2011-03-04 A |  | 100% |  |  |  |  |  |  |  |
| 64 | 2.1.1.6.4.2 | 1st review by bank |  | 6d | 2011-03-07 | 2011-03-14 | 63 |  |  | 260d | 0d |  |  |  |  |
| 65 | 2.1.1.6.4.3 | 1st amendment |  | 10d | 2011-03-15 | 2011-03-28 | 64 |  |  | 260d | 0d |  |  |  |  |
| 66 | 2.1.1.6.4.4 | 2nd FS submission | milestone | 0d | 2011-03-28 | 2011-03-28 | 65 |  |  | 260d | 0d |  |  |  |  |
| 67 | 2.1.1.6.4.5 | 2nd review by bank |  | 4d | 2011-03-29 | 2011-04-01 | 66 |  |  | 260d | 0d |  |  |  |  |
| 68 | 2.1.1.6.4.6 | Sign-off | milestone | 0d | 2011-04-01 | 2011-04-01 | 67 |  |  | 260d |  |  | UOB |  |  |
| 69 | 2.1.1.6.5 | **Batch 3** |  | 11d | 2011-02-28 A | 2011-03-14 | 17 | 70% | 3.3d | 274d |  |  |  | 528h | 343.2h |
| 70 | 2.1.1.6.5.1 | UOBCM-IFS-FS005 - Facility Structuring |  | 11d | 2011-02-28 A | 2011-03-14 |  | 50% | 5.5d | 226d |  |  | Patricia | 88h | 44h |
| 71 | 2.1.1.6.5.2 | UOBCM-IFS-FS010 - CAS Printout |  | 11d | 2011-02-28 A | 2011-03-14 |  | 80% | 2.2d | 226d |  |  | Mellisa | 88h | 70.4h |
| 72 | 2.1.1.6.5.3 | UOBCM-IFS-FS012 - Approval Routing & Workflow |  | 11d | 2011-02-28 A | 2011-03-14 |  | 80% | 2.2d | 226d |  |  | Adeline | 88h | 70.4h |
| 73 | 2.1.1.6.5.4 | UOBCM-IFS-FS002 - Obligor & Aggregation |  | 11d | 2011-02-28 A | 2011-03-14 A |  | 100% |  |  |  |  | patrick | 88h | 88h |
| 74 | 2.1.1.6.5.5 | UOBCM-IFS-FS015 - System Administration |  | 11d | 2011-02-28 A | 2011-03-14 |  | 40% | 6.6d | 226d |  |  | Mellisa; Bollama | 176h | 70.4h |
| 75 | 2.1.1.6.6 | **Batch 3 Review** |  | 15d | 2011-03-14 | 2011-04-01 |  |  |  | 260d |  |  |  | 104h |  |
| 76 | 2.1.1.6.6.1 | 1st FS submission |  | 1d | 2011-03-14 | 2011-03-14 |  |  |  | 212d | 0d | start no earlier than 2011-03-14 | Vishnu | 8h |  |
| 77 | 2.1.1.6.6.2 | 1st review by bank |  | 6d | 2011-03-15 | 2011-03-22 | 76 |  |  | 260d | 0d |  | UOB; Alicia | 96h |  |
| 78 | 2.1.1.6.6.3 | 1st amendment |  | 3d | 2011-03-23 | 2011-03-25 | 77 |  |  | 260d | 0d |  |  |  |  |
| 79 | 2.1.1.6.6.4 | 2nd FS submission |  | 1d | 2011-03-28 | 2011-03-28 | 78 |  |  | 260d | 0d |  |  |  |  |
| 80 | 2.1.1.6.6.5 | 2nd review by bank |  | 4d | 2011-03-29 | 2011-04-01 | 79 |  |  | 260d | 0d |  |  |  |  |
| 81 | 2.1.1.6.6.6 | Sign-off | milestone | 0d | 2011-04-01 | 2011-04-01 | 80 |  |  | 260d |  |  | UOB |  |  |

| ID | WBS | Task | Type | Duration | Start | Finish | Predecessors | Complete | Remaining | Total slack | Free slack | Constraint | Resources | Work | Actual work |
| --- | --- | --- | --- | --- | --- | --- | --- | --- | --- | --- | --- | --- | --- | --- | --- |
| 82 | 2.1.1.6.7 | **Batch 4** |  | 8d | 2011-03-14 A | 2011-03-23 | 33 | 6% | 7.53d | 267d |  |  |  | 168h | 8h |
| 83 | 2.1.1.6.7.1 | UOBCM-IFS-FS014 - Post Approval |  | 1d | 2011-03-21 | 2011-03-21 | 31 |  |  | 211d |  |  | patrick | 8h |  |
| 84 | 2.1.1.6.7.2 | UOBCM-IFS-FS017 - Reports |  | 8d | 2011-03-14 A | 2011-03-23 |  | 6% | 7.5d | 207d | 0d |  | Bollama | 64h | 4h |
| 85 | 2.1.1.6.7.3 | UOBCM-IFS-FS018 - Notification |  | 8d | 2011-03-14 A | 2011-03-23 |  | 6% | 7.5d | 209d |  |  | Bollama [153.3%] | 96h | 4h |
| 86 | 2.1.1.6.8 | **Batch 4 Review** |  | 12d | 2011-03-24 | 2011-04-08 | 84 |  |  | 255d |  |  |  | 72h |  |
| 87 | 2.1.1.6.8.1 | 1st FS submission |  | 1d | 2011-03-24 | 2011-03-24 |  |  |  | 255d | 0d | start no earlier than 2011-03-21 | Vishnu | 8h |  |
| 88 | 2.1.1.6.8.2 | 1st review by bank |  | 4d | 2011-03-25 | 2011-03-30 | 87 |  |  | 255d | 0d |  | UOB; Alicia | 64h |  |
| 89 | 2.1.1.6.8.3 | 1st amendment |  | 3d | 2011-03-31 | 2011-04-04 | 88 |  |  | 255d | 0d |  |  |  |  |
| 90 | 2.1.1.6.8.4 | 2nd FS submission |  | 1d | 2011-04-05 | 2011-04-05 | 89 |  |  | 255d | 0d |  |  |  |  |
| 91 | 2.1.1.6.8.5 | 2nd review by bank |  | 3d | 2011-04-06 | 2011-04-08 | 90 |  |  | 255d | 0d |  |  |  |  |
| 92 | 2.1.1.6.8.6 | Sign-off | milestone | 0d | 2011-04-08 | 2011-04-08 | 91 |  |  | 255d |  |  | UOB |  |  |
| 93 | 2.2 | **Design Phase** |  | 20d | 2011-03-28 | 2011-04-22 | 47 |  |  | 0d |  |  |  | 8h |  |
| 94 | 2.2.1 | Tech Specs Requirements -UOBCM-IFS-FS020 |  | 10d | 2011-03-28 | 2011-04-08 |  |  |  | 0d |  |  |  |  |  |
| 95 | 2.2.2 | Tech Specs Submission |  | 1d | 2011-04-11 | 2011-04-11 | 94 |  |  | 0d |  |  |  |  |  |
| 96 | 2.2.3 | Techinical Design Review Workshop |  | 1d | 2011-04-12 | 2011-04-12 | 95 |  |  | 0d |  |  |  |  |  |
| 97 | 2.2.4 | Tech Specs Review & Revision |  | 7d | 2011-04-13 | 2011-04-21 | 96 |  |  | 0d |  |  |  |  |  |
| 98 | 2.2.5 | Tech Specs Sign-Off |  | 1d | 2011-04-22 | 2011-04-22 | 97 |  |  | 0d |  |  | UOB | 8h |  |
| 99 | 2.3 | **Requirement Study (SG Data Conversion)** |  | 41d | 2011-03-21 | 2011-05-16 |  |  |  | 44d | 0d |  |  | 64h |  |
| 100 | 2.3.1 | **Data Conversion Overview (PLS)** |  | 8d | 2011-03-21 | 2011-03-30 |  |  |  | 44d | 0d |  |  | 64h |  |
| 101 | 2.3.1.1 | **Customer & Facility Linkage** |  | 2d | 2011-03-21 | 2011-03-22 |  |  |  | 44d | 0d | start no earlier than 2011-03-21 |  |  |  |
| 102 | 2.3.1.1.1 | Basic Customer Demographic |  | 2d | 2011-03-21 | 2011-03-22 |  |  |  | 44d |  |  |  |  |  |
| 103 | 2.3.1.1.2 | Facility Structure (loan) |  | 2d | 2011-03-21 | 2011-03-22 |  |  |  | 44d |  |  |  |  |  |
| 104 | 2.3.1.1.3 | Facility Structure (OD, CC) |  | 2d | 2011-03-21 | 2011-03-22 |  |  |  | 44d |  |  |  |  |  |
| 105 | 2.3.1.1.4 | Facility Structure (Trade) |  | 2d | 2011-03-21 | 2011-03-22 |  |  |  | 44d |  |  |  |  |  |
| 106 | 2.3.1.1.5 | Facility Structure (Treasury) |  | 2d | 2011-03-21 | 2011-03-22 |  |  |  | 44d |  |  |  |  |  |
| 107 | 2.3.1.1.6 | Facility Structure (Factoring) |  | 2d | 2011-03-21 | 2011-03-22 |  |  |  | 44d |  |  |  |  |  |
| 108 | 2.3.1.1.7 | CAS-FP - Facility relationship |  | 2d | 2011-03-21 | 2011-03-22 |  |  |  | 44d |  |  |  |  |  |
| 109 | 2.3.1.1.8 | Omnibus/ Sub-limit |  | 2d | 2011-03-21 | 2011-03-22 |  |  |  | 44d |  |  |  |  |  |
| 110 | 2.3.1.1.9 | Facility Owner and Account Info |  | 2d | 2011-03-21 | 2011-03-22 |  |  |  | 44d |  |  |  |  |  |

Notes:
- 94: ·Development environment ·Application Architecture - draft ·System Design - draft ·Functional Requirement - Overview ·Program Description - draft ·Database Design - Common functionalities ·Database Design - Financial Spreading ·Database Design - Borrower ·Database Design - Credit Application ·Database Design - Collateral Structuring ·Database Design - Credit Rating ·Database Design - Obligor & Aggregation ·Database Design - Facility Structuring ·Database Design - User Administration ·Database Design - System Administration ·Database Design - Post Approval ·Database Design - Workflow ·Workflow design - Maker checker ·Workflow design - Financial spreading ·Workflow design - Credit Applications ·Workflow design - Post approval ·Workflow design - Others ·Interface Requirement - BRE ·Interface Requirement - SSO ·Interface Requirement - Batch ·Interface Requirement - Online ·Revised Application Architecture + System Design + Program Description

| ID | WBS | Task | Duration | Start | Finish | Predecessors | Total slack | Free slack | Resources | Work |
| --- | --- | --- | --- | --- | --- | --- | --- | --- | --- | --- |
| 111 | 2.3.1.2 | **T&C** | 1d | 2011-03-23 | 2011-03-23 | 101 | 44d | 0d | Mellisa; Sujeevan | 16h |
| 112 | 2.3.1.2.1 | Pre/Post Disbursement Conditions | 1d | 2011-03-23 | 2011-03-23 |  | 44d |  |  |  |
| 113 | 2.3.1.2.2 | Condition Precedents | 1d | 2011-03-23 | 2011-03-23 |  | 44d |  |  |  |
| 114 | 2.3.1.2.3 | Other Conditions | 1d | 2011-03-23 | 2011-03-23 |  | 44d |  |  |  |
| 115 | 2.3.1.3 | **Pricing** | 1d | 2011-03-24 | 2011-03-24 | 111 | 44d | 0d |  |  |
| 116 | 2.3.1.3.1 | Pricing (Single Tier) | 1d | 2011-03-24 | 2011-03-24 |  | 44d |  |  |  |
| 117 | 2.3.1.3.2 | Pricing (multi-tier by Tenor) | 1d | 2011-03-24 | 2011-03-24 |  | 44d |  |  |  |
| 118 | 2.3.1.3.3 | Pricing (multi-tier by amount) | 1d | 2011-03-24 | 2011-03-24 |  | 44d |  |  |  |
| 119 | 2.3.1.4 | **Collateral** | 1d | 2011-03-25 | 2011-03-25 | 115 | 44d | 0d | Mellisa; Sujeevan | 16h |
| 120 | 2.3.1.4.1 | LM | 1d | 2011-03-25 | 2011-03-25 |  | 44d |  |  |  |
| 121 | 2.3.1.4.2 | Guarantee (CG, PG, SBLC, JSG) | 1d | 2011-03-25 | 2011-03-25 |  | 44d |  |  |  |
| 122 | 2.3.1.4.3 | Asset Based, Documentation | 1d | 2011-03-25 | 2011-03-25 |  | 44d |  |  |  |
| 123 | 2.3.1.4.4 | Insurance & Marketable Securities | 1d | 2011-03-25 | 2011-03-25 |  | 44d |  |  |  |
| 124 | 2.3.1.4.5 | Others & Clean | 1d | 2011-03-25 | 2011-03-25 |  | 44d |  |  |  |
| 125 | 2.3.1.5 | **Collateral & Facility Linkage** | 1d | 2011-03-28 | 2011-03-28 | 119 | 44d | 0d | Mellisa; Sujeevan | 16h |
| 126 | 2.3.1.5.1 | Collateral & Facility linkage/business logic | 1d | 2011-03-28 | 2011-03-28 |  | 44d |  |  |  |
| 127 | 2.3.1.5.2 | Multiple Scenarios & Handling | 1d | 2011-03-28 | 2011-03-28 |  | 44d |  |  |  |
| 128 | 2.3.1.5.3 | Omnibus line, Parent/Child Limit | 1d | 2011-03-28 | 2011-03-28 |  | 44d |  |  |  |
| 129 | 2.3.1.6 | **CAS Structure** | 1d | 2011-03-29 | 2011-03-29 | 125 | 44d | 0d | Mellisa | 8h |
| 130 | 2.3.1.6.1 | CAS Structure (co-borrowing) | 1d | 2011-03-29 | 2011-03-29 |  | 44d |  |  |  |
| 131 | 2.3.1.6.2 | CAS Structure (Shared-line) | 1d | 2011-03-29 | 2011-03-29 |  | 44d |  |  |  |
| 132 | 2.3.1.6.3 | CAS Structure (Clean) | 1d | 2011-03-29 | 2011-03-29 |  | 44d |  |  |  |
| 133 | 2.3.1.7 | **RCG Group** | 1d | 2011-03-30 | 2011-03-30 | 129 | 44d | 0d | patrick | 8h |
| 134 | 2.3.1.7.1 | RCG groups conversion logic | 1d | 2011-03-30 | 2011-03-30 |  | 44d |  |  |  |
| 135 | 2.3.2 | Historical CAS | 1d | 2011-03-31 | 2011-03-31 | 133 | 44d | 0d |  |  |
| 136 | 2.3.3 | Conversion Approach with Fall Back Plan and Reports Requirement Discussion | 1d | 2011-04-01 | 2011-04-01 | 135 | 44d | 0d |  |  |
| 137 | 2.3.4 | Reports Requirement Discussion and Other Matters | 1d | 2011-04-04 | 2011-04-04 | 136 | 44d | 0d |  |  |

| ID | WBS | Task | Duration | Start | Finish | Predecessors | Total slack | Free slack |
| --- | --- | --- | --- | --- | --- | --- | --- | --- |
| 138 | 2.3.5 | **Data Conversion Overview (MFA)** | 1d | 2011-04-05 | 2011-04-05 | 137 | 44d | 0d |
| 139 | 2.3.5.1 | Financial Spreading Template | 1d | 2011-04-05 | 2011-04-05 |  | 44d |  |
| 140 | 2.3.5.2 | P&L - Income | 1d | 2011-04-05 | 2011-04-05 |  | 44d |  |
| 141 | 2.3.5.3 | P&L - Expenses | 1d | 2011-04-05 | 2011-04-05 |  | 44d |  |
| 142 | 2.3.5.4 | Balance Sheet - Asset | 1d | 2011-04-05 | 2011-04-05 |  | 44d |  |
| 143 | 2.3.5.5 | Balance Sheet - Liability | 1d | 2011-04-05 | 2011-04-05 |  | 44d |  |
| 144 | 2.3.5.6 | Networth /Owner's Equity | 1d | 2011-04-05 | 2011-04-05 |  | 44d |  |
| 145 | 2.3.5.7 | Parent/Child Item Mapping Clarification | 1d | 2011-04-05 | 2011-04-05 |  | 44d |  |
| 146 | 2.3.5.8 | Company vs Consolidated Statement | 1d | 2011-04-05 | 2011-04-05 |  | 44d |  |
| 147 | 2.3.5.9 | Financial Year Ended, Months Statement Mapping | 1d | 2011-04-05 | 2011-04-05 |  | 44d |  |
| 148 | 2.3.5.10 | Conversion Approach with Fall Back Plan Discussion | 1d | 2011-04-05 | 2011-04-05 |  | 44d |  |
| 149 | 2.3.5.11 | Coversion Reports and other matters | 1d | 2011-04-05 | 2011-04-05 |  | 44d |  |
| 150 | 2.3.6 | **Data Conversion Overview (MRA)** | 1d | 2011-04-06 | 2011-04-06 | 138 | 44d | 0d |
| 151 | 2.3.6.1 | Archive & historical rating | 1d | 2011-04-06 | 2011-04-06 |  | 44d |  |
| 152 | 2.3.7 | **Data conversion Functional Preparation & Review** | 33d | 2011-03-31 | 2011-05-16 |  | 44d |  |
| 153 | 2.3.7.1 | **Batch 1 - PLS** | 30d | 2011-03-31 | 2011-05-11 |  | 47d |  |
| 154 | 2.3.7.1.1 | File format submission by Integro | 1d | 2011-03-31 | 2011-03-31 | 100 | 47d | 0d |
| 155 | 2.3.7.1.2 | File format mapping by UOB | 14d | 2011-04-01 | 2011-04-20 | 154 | 47d | 0d |
| 156 | 2.3.7.1.3 | File format Review | 5d | 2011-04-21 | 2011-04-27 | 155 | 47d | 0d |
| 157 | 2.3.7.1.4 | File format Amendment | 5d | 2011-04-28 | 2011-05-04 | 156 | 47d | 0d |
| 158 | 2.3.7.1.5 | File format 2nd Review | 4d | 2011-05-05 | 2011-05-10 | 157 | 47d | 0d |
| 159 | 2.3.7.1.6 | File format sign off | 1d | 2011-05-11 | 2011-05-11 | 158 | 47d |  |
| 160 | 2.3.7.2 | **Batch 2 - MFA** | 28d | 2011-04-06 | 2011-05-13 |  | 45d |  |
| 161 | 2.3.7.2.1 | File format submission by Integro | 1d | 2011-04-06 | 2011-04-06 | 138 | 45d | 0d |
| 162 | 2.3.7.2.2 | File format mapping by UOB | 14d | 2011-04-07 | 2011-04-26 | 161 | 45d | 0d |
| 163 | 2.3.7.2.3 | File format Review | 5d | 2011-04-27 | 2011-05-03 | 162 | 45d | 0d |
| 164 | 2.3.7.2.4 | File format Amendment | 4d | 2011-05-04 | 2011-05-09 | 163 | 45d | 0d |
| 165 | 2.3.7.2.5 | File format 2nd Review | 3d | 2011-05-10 | 2011-05-12 | 164 | 45d | 0d |
| 166 | 2.3.7.2.6 | File format sign off | 1d | 2011-05-13 | 2011-05-13 | 165 | 45d |  |

| ID | WBS | Task | Duration | Start | Finish | Predecessors | Total slack | Free slack |
| --- | --- | --- | --- | --- | --- | --- | --- | --- |
| 167 | 2.3.7.3 | **Batch 3 - MRA** | 28d | 2011-04-07 | 2011-05-16 |  | 44d |  |
| 168 | 2.3.7.3.1 | File format submission by Integro | 1d | 2011-04-07 | 2011-04-07 | 150 | 44d | 0d |
| 169 | 2.3.7.3.2 | File format mapping by UOB | 14d | 2011-04-08 | 2011-04-27 | 168 | 44d | 0d |
| 170 | 2.3.7.3.3 | File format Review | 5d | 2011-04-28 | 2011-05-04 | 169 | 44d | 0d |
| 171 | 2.3.7.3.4 | File format Amendment | 4d | 2011-05-05 | 2011-05-10 | 170 | 44d | 0d |
| 172 | 2.3.7.3.5 | File format 2nd Review | 3d | 2011-05-11 | 2011-05-13 | 171 | 44d | 0d |
| 173 | 2.3.7.3.6 | File format sign off | 1d | 2011-05-16 | 2011-05-16 | 172 | 44d |  |
| 174 | 2.4 | **Requirements Study (4 Subsidiaries)** | 62d | 2011-05-23 | 2011-08-16 | 1FS+100d | 163d |  |
| 175 | 2.4.1 | **Application Delta** | 19d | 2011-05-23 | 2011-06-16 |  | 163d | 0d |
| 176 | 2.4.1.1 | Team Structure | 0.5d | 2011-05-23 | 2011-05-23 |  | 163d | 0d |
| 177 | 2.4.1.2 | Demographic Info | 1d | 2011-05-23 | 2011-05-24 | 176 | 163d | 0d |
| 178 | 2.4.1.3 | COA, Business, Relationship, Call Report | 1d | 2011-05-24 | 2011-05-25 | 177 | 163d | 0d |
| 179 | 2.4.1.4 | Facility & Data blocks | 1d | 2011-05-25 | 2011-05-26 | 178 | 163d | 0d |
| 180 | 2.4.1.5 | Financial Spreading, Analysis | 1d | 2011-05-26 | 2011-05-27 | 179 | 163d | 0d |
| 181 | 2.4.1.6 | Collateral & Facility Linkage, Allocation | 1d | 2011-05-27 | 2011-05-30 | 180 | 163d | 0d |
| 182 | 2.4.1.7 | One Obligor Exposure & Group Maintenance | 1d | 2011-05-30 | 2011-05-31 | 181 | 163d | 0d |
| 183 | 2.4.1.8 | Prototype Walkthrough 1 | 1d | 2011-05-31 | 2011-06-01 | 182 | 163d | 0d |
| 184 | 2.4.1.9 | Approval Workflow and CDL | 1d | 2011-06-01 | 2011-06-02 | 183 | 163d | 0d |
| 185 | 2.4.1.10 | Rating & Credit Policy | 0.5d | 2011-06-02 | 2011-06-02 | 184 | 163d | 0d |
| 186 | 2.4.1.11 | CAS Printout | 0.5d | 2011-06-03 | 2011-06-03 | 185 | 163d | 0d |
| 187 | 2.4.1.12 | Credit Memo | 0.5d | 2011-06-03 | 2011-06-03 | 186 | 163d | 0d |
| 188 | 2.4.1.13 | Credit Review, Variation, Restructure, Group Review | 1d | 2011-06-06 | 2011-06-06 | 187 | 163d | 0d |
| 189 | 2.4.1.14 | Admin - User Maintenance, Parameter Maintenance | 1d | 2011-06-07 | 2011-06-07 | 188 | 163d | 0d |
| 190 | 2.4.1.15 | Admin - Facility Maintenance | 0.5d | 2011-06-08 | 2011-06-08 | 189 | 163d | 0d |
| 191 | 2.4.1.16 | Prototype Walkthough 2 | 1d | 2011-06-08 | 2011-06-09 | 190 | 163d | 0d |
| 192 | 2.4.1.17 | Post Approval (LD, II, Account Linking) for MY | 0.5d | 2011-06-09 | 2011-06-09 | 191 | 163d | 0d |
| 193 | 2.4.1.18 | Post Approval (LD, II, Account Linking) for TH | 0.5d | 2011-06-10 | 2011-06-10 | 192 | 163d | 0d |
| 194 | 2.4.1.19 | Post Approval (LD, II, Account Linking) for IN | 0.5d | 2011-06-10 | 2011-06-10 | 193 | 163d | 0d |
| 195 | 2.4.1.20 | Post Approval (LD, II, Account Linking) for CN | 0.5d | 2011-06-13 | 2011-06-13 | 194 | 163d | 0d |
| 196 | 2.4.1.21 | Post Approval Consolidation of requirements | 1d | 2011-06-13 | 2011-06-14 | 195 | 163d | 0d |
| 197 | 2.4.1.22 | Post Approval Prototype Consolidation and Walkthrough | 1d | 2011-06-14 | 2011-06-15 | 196 | 163d | 0d |
| 198 | 2.4.1.23 | LO Gen, Documentation | 1d | 2011-06-15 | 2011-06-16 | 197 | 163d | 0d |
| 199 | 2.4.1.24 | Notification | 0.5d | 2011-06-16 | 2011-06-16 | 198 | 163d | 0d |

Notes:
- 174: Not planned in the schedule till confirmation frm Karen on 11th April 2011

| ID | WBS | Task | Duration | Start | Finish | Predecessors | Total slack | Free slack |
| --- | --- | --- | --- | --- | --- | --- | --- | --- |
| 200 | 2.4.2 | **Report Delta** | 3d | 2011-06-17 | 2011-06-21 |  | 203d |  |
| 201 | 2.4.2.1 | Reports for Admin Module | 1d | 2011-06-17 | 2011-06-17 | 199 | 203d | 0d |
| 202 | 2.4.2.2 | Reports for RM/RMTL, CA | 1d | 2011-06-20 | 2011-06-20 | 201 | 203d | 0d |
| 203 | 2.4.2.3 | Reports for Post Approval | 1d | 2011-06-21 | 2011-06-21 | 202 | 203d |  |
| 204 | 2.4.3 | **Interface Delta** | 13d | 2011-06-17 | 2011-07-05 | 175 | 163d | 0d |
| 205 | 2.4.3.1 | BWC or its equiv. | 1d | 2011-06-17 | 2011-06-17 |  | 163d | 0d |
| 206 | 2.4.3.2 | COA (FITAS, RBK, MCL) or its equiv. | 1d | 2011-06-20 | 2011-06-20 | 205 | 163d | 0d |
| 207 | 2.4.3.3 | CDMS or its equiv. | 1d | 2011-06-21 | 2011-06-21 | 206 | 163d | 0d |
| 208 | 2.4.3.4 | IFIS, CSS, NPL or its equiv. | 1d | 2011-06-22 | 2011-06-22 | 207 | 163d | 0d |
| 209 | 2.4.3.5 | ILOG | 1d | 2011-06-23 | 2011-06-23 | 208 | 163d | 0d |
| 210 | 2.4.3.6 | PLCE, BCAS (SG)+ (TH) or its equiv. | 1d | 2011-06-24 | 2011-06-24 | 209 | 163d | 0d |
| 211 | 2.4.3.7 | LES, GRP or its equiv. | 1d | 2011-06-27 | 2011-06-27 | 210 | 163d | 0d |
| 212 | 2.4.3.8 | GDW, SBS, VBM or its equiv. | 1d | 2011-06-28 | 2011-06-28 | 211 | 163d | 0d |
| 213 | 2.4.3.9 | Single Source approach for Subsidiaries interfaces (implementation plan) | 5d | 2011-06-29 | 2011-07-05 | 212 | 163d |  |
| 214 | 2.4.4 | **LOS Delta Functional Specification Preparation & Submission** | 30d | 2011-07-06 | 2011-08-16 | 204 | 163d |  |
| 215 | 2.4.4.1 | LOS Delta Functional Specification Review | 15d | 2011-07-06 | 2011-07-26 |  | 163d | 0d |
| 216 | 2.4.4.2 | LOS Delta Functional Specification Rework & Final Submission + Report FS Submission | 8d | 2011-07-27 | 2011-08-05 | 215 | 163d | 0d |
| 217 | 2.4.4.3 | LOS Delta Functional Specification Final Amendment & Sign-off | 7d | 2011-08-08 | 2011-08-16 | 216 | 163d |  |
| 218 | 2.5 | **Development Phase** | 90d | 2011-04-25 | 2011-08-26 | 93 | 0d |  |
| 219 | 2.5.1 | **Application Development** | 90d | 2011-04-25 | 2011-08-26 |  | 0d |  |
| 220 | 2.5.1.1 | Customer | 90d | 2011-04-25 | 2011-08-26 |  | 0d |  |
| 221 | 2.5.1.2 | Obligor Group Set up | 90d | 2011-04-25 | 2011-08-26 |  | 0d |  |
| 222 | 2.5.1.3 | Credit Rating & Structuring | 90d | 2011-04-25 | 2011-08-26 |  | 0d |  |
| 223 | 2.5.1.4 | Credit Application Process | 90d | 2011-04-25 | 2011-08-26 |  | 0d |  |
| 224 | 2.5.1.5 | Regulatory & Credit Checks | 90d | 2011-04-25 | 2011-08-26 |  | 0d |  |
| 225 | 2.5.1.6 | Reports | 90d | 2011-04-25 | 2011-08-26 |  | 0d |  |
| 226 | 2.5.1.7 | Post Approval | 90d | 2011-04-25 | 2011-08-26 |  | 0d |  |
| 227 | 2.5.1.8 | Admin & Parameter Set-up | 90d | 2011-04-25 | 2011-08-26 |  | 0d |  |
| 228 | 2.5.1.9 | Document Management System | 90d | 2011-04-25 | 2011-08-26 |  | 0d |  |
| 229 | 2.5.1.10 | Interfaces (online/batch), Report Development | 90d | 2011-04-25 | 2011-08-26 |  | 0d |  |

| ID | WBS | Task | Duration | Start | Finish | Predecessors | Total slack | Free slack | Resources | Work |
| --- | --- | --- | --- | --- | --- | --- | --- | --- | --- | --- |
| 230 | 2.5.2 | **Data Conversion** | 30d | 2011-05-17 | 2011-06-27 | 99 | 44d |  |  |  |
| 231 | 2.5.2.1 | Data Conversion Development | 30d | 2011-05-17 | 2011-06-27 |  | 44d |  |  |  |
| 232 | 2.6 | **Testing Preparation** | 30d | 2011-07-11 | 2011-08-19 | 93 | 5d |  |  |  |
| 233 | 2.6.1 | Prepare Test Plan | 30d | 2011-07-11 | 2011-08-19 | 219FF-5d | 5d |  |  |  |
| 234 | 2.7 | **Vendor Inter Testing** | 15d | 2011-08-29 | 2011-09-16 | 218, 232 | 0d |  | Integro | 120h |
| 235 | 2.7.1 | Conduct VIT | 15d | 2011-08-29 | 2011-09-16 |  | 0d |  |  |  |
| 236 | 2.8 | **SIT** | 108d | 2011-07-25 | 2011-12-21 | 218FS-25d | 0d |  |  | 3456h |
| 237 | 2.8.1 | **Application SIT** | 108d | 2011-07-25 | 2011-12-21 |  | 0d |  | UOB | 1648h |
| 238 | 2.8.1.1 | **SIT Plan Preparation** | 23d | 2011-07-25 | 2011-08-24 |  | 34d |  | UOB | 232h |
| 239 | 2.8.1.1.1 | Prepare SIT Plan | 5d | 2011-07-25 | 2011-07-29 |  | 34d | 0d | UOB | 40h |
| 240 | 2.8.1.1.2 | Conduct SIT Plan Review Meeting | 1d | 2011-08-01 | 2011-08-01 | 239 | 34d | 0d | UOB | 8h |
| 241 | 2.8.1.1.3 | Determine SIT Test Scope | 3d | 2011-08-02 | 2011-08-04 | 240 | 34d | 0d |  |  |
| 242 | 2.8.1.1.4 | Determine Test Approach | 3d | 2011-08-05 | 2011-08-09 | 241 | 34d | 0d |  |  |
| 243 | 2.8.1.1.5 | SIT Plan Signoff | 1d | 2011-08-10 | 2011-08-10 | 242 | 34d | 0d |  |  |
| 244 | 2.8.1.1.6 | Prepare/Review SIT Test Script | 10d | 2011-08-11 | 2011-08-24 | 243 | 85d |  |  |  |
| 245 | 2.8.1.2 | **Setup SIT Environment** | 10d | 2011-07-25 | 2011-08-05 |  | 98d |  |  | 8h |
| 246 | 2.8.1.2.1 | Hardware delivered and installation | 1d | 2011-07-25 | 2011-07-25 |  | 107d |  |  |  |
| 247 | 2.8.1.2.2 | Install AIX (2 machine), Disk/ESS Storage setup | 1d | 2011-07-25 | 2011-07-25 |  | 107d |  |  |  |
| 248 | 2.8.1.2.3 | Setup Server Directories, User Groups & Id Accounts | 5d | 2011-07-25 | 2011-07-29 |  | 103d |  |  |  |
| 249 | 2.8.1.2.4 | Install Oracle Database (1 machine) | 3d | 2011-07-25 | 2011-07-27 |  | 105d |  |  |  |
| 250 | 2.8.1.2.5 | Config Oracle Database | 2d | 2011-07-25 | 2011-07-26 |  | 106d |  |  |  |
| 251 | 2.8.1.2.6 | Security/IT System Password Encryption Setup | 5d | 2011-07-25 | 2011-07-29 |  | 103d |  |  |  |
| 252 | 2.8.1.2.7 | Install weblogic on apps server | 1d | 2011-07-25 | 2011-07-25 |  | 107d |  |  |  |
| 253 | 2.8.1.2.8 | Batch Environment Setup: CD Transfer, MQ, Ctrl-M | 10d | 2011-07-25 | 2011-08-05 |  | 98d |  |  |  |
| 254 | 2.8.1.2.9 | Install other sw as appropriate ( SCM, Tivoli End Point, EMC/BMC, TSM etc) | 1d | 2011-07-25 | 2011-07-25 |  | 107d |  |  |  |
| 255 | 2.8.1.2.10 | Program Deployment to SIT | 1d | 2011-07-25 | 2011-07-25 |  | 107d |  | Integro | 8h |
| 256 | 2.8.1.2.11 | Hardening on SIT machine | 5d | 2011-07-25 | 2011-07-29 |  | 103d |  |  |  |
| 257 | 2.8.1.2.12 | Connectivity Test | 1d | 2011-07-25 | 2011-07-25 |  | 107d |  |  |  |
| 258 | 2.8.1.2.13 | Setup user access right metrix in system for SIT | 10d | 2011-07-25 | 2011-08-05 |  | 98d |  |  |  |
| 259 | 2.8.1.2.14 | Parameter Setting - Security/IT/Business Admin | 5d | 2011-07-25 | 2011-07-29 |  | 103d |  |  |  |
| 260 | 2.8.1.2.15 | Site Readiness (Seats, PCs, Networks, Phones) | 1d | 2011-07-25 | 2011-07-25 |  | 107d |  |  |  |
| 261 | 2.8.1.2.16 | Preparation of SIT Data | 5d | 2011-07-25 | 2011-07-29 |  | 103d |  |  |  |
| 262 | 2.8.1.2.17 | Setup of SIT IDs | 5d | 2011-07-25 | 2011-07-29 |  | 103d |  |  |  |
| 263 | 2.8.1.2.18 | Setup MQC Ids | 5d | 2011-07-25 | 2011-07-29 |  | 103d |  |  |  |
| 264 | 2.8.1.2.19 | Connectivity Tests with Interface Systems | 5d | 2011-07-25 | 2011-07-29 |  | 103d |  |  |  |
| 265 | 2.8.1.2.20 | Apply Application Security | 5d | 2011-07-25 | 2011-07-29 |  | 103d |  |  |  |

Notes:
- 236: 1 month for SIT preparation earlier. SIT testing starts after developement.

| ID | WBS | Task | Type | Duration | Start | Finish | Predecessors | Total slack | Free slack | Constraint | Resources | Work |
| --- | --- | --- | --- | --- | --- | --- | --- | --- | --- | --- | --- | --- |
| 266 | 2.8.1.3 | **Conduct SIT** |  | 68d | 2011-09-19 | 2011-12-21 | 234 | 0d |  |  |  | 544h |
| 267 | 2.8.1.3.1 | Setup of Control-M |  | 2d | 2011-09-19 | 2011-09-20 |  | 0d |  |  | UOB | 16h |
| 268 | 2.8.1.3.2 | SIT Cycle 1 |  | 32d | 2011-09-21 | 2011-11-03 | 267 | 0d |  |  | UOB | 256h |
| 269 | 2.8.1.3.3 | SIT Cycle 2 |  | 33d | 2011-11-04 | 2011-12-20 | 268 | 0d |  |  | UOB | 264h |
| 270 | 2.8.1.3.4 | Update Action Logs on outstanding MQC |  | 1d | 2011-12-21 | 2011-12-21 | 269 | 0d |  |  | UOB | 8h |
| 271 | 2.8.1.3.5 | SIT Signoff | milestone | 0d | 2011-12-21 | 2011-12-21 | 270 | 0d |  |  | UOB |  |
| 272 | 2.8.2 | **Data Conversion SIT** |  | 88d | 2011-08-11 | 2011-12-12 | 243 | 7d |  |  | UOB | 1808h |
| 273 | 2.8.2.1 | Prepare SIT Conv Plan |  | 5d | 2011-08-11 | 2011-08-17 |  | 78d | 0d |  | UOB | 40h |
| 274 | 2.8.2.2 | Conduct SIT Conv Plan Review Meeting |  | 1d | 2011-08-18 | 2011-08-18 | 273 | 78d | 0d |  | UOB | 8h |
| 275 | 2.8.2.3 | Determine SIT Conv Test Scope |  | 2d | 2011-08-19 | 2011-08-22 | 274 | 78d | 0d |  | UOB | 16h |
| 276 | 2.8.2.4 | Determine Conv Test Approach |  | 2d | 2011-08-23 | 2011-08-24 | 275 | 78d | 0d |  | UOB | 16h |
| 277 | 2.8.2.5 | SIT Conv Plan Signoff |  | 1d | 2011-08-25 | 2011-08-25 | 276 | 78d | 0d |  | UOB | 8h |
| 278 | 2.8.2.6 | Setup SIT Conv Environment |  | 3d | 2011-08-26 | 2011-08-30 | 277 | 78d | 0d |  | UOB | 24h |
| 279 | 2.8.2.7 | Prepare/Review SIT Conv Test Script |  | 3d | 2011-08-31 | 2011-09-02 | 278 | 78d |  |  | UOB | 24h |
| 280 | 2.8.2.8 | **Conduct of Conv SIT** |  | 60d | 2011-09-19 | 2011-12-09 | 230, 234 | 7d |  |  | UOB | 960h |
| 281 | 2.8.2.8.1 | SIT Conv Cycle 1 |  | 30d | 2011-09-19 | 2011-10-28 |  | 7d | 0d |  | UOB | 240h |
| 282 | 2.8.2.8.2 | SIT Conv Cycle 2 |  | 30d | 2011-10-31 | 2011-12-09 | 281 | 7d | 0d |  | UOB | 240h |
| 283 | 2.8.2.9 | Update Action Logs on outstanding MQC |  | 1d | 2011-12-12 | 2011-12-12 | 282 | 7d | 0d |  | UOB | 8h |
| 284 | 2.8.2.10 | SIT Conv Signoff | milestone | 0d | 2011-12-12 | 2011-12-12 | 283 | 7d | 0d |  | UOB |  |
| 285 | 2.9 | **UAT** |  | 160d? | 2011-08-11 | 2012-03-21 |  | 7d |  |  |  | 152h |
| 286 | 2.9.1 | **Application UAT** |  | 160d? | 2011-08-11 | 2012-03-21 | 243 | 7d |  |  |  | 152h |
| 287 | 2.9.1.1 | Prepare UAT Plan |  | 5d | 2011-09-19 | 2011-09-23 |  | 95d | 0d | start no earlier than 2011-09-19 |  |  |
| 288 | 2.9.1.2 | Conduct UAT Plan Review Meeting |  | 1d | 2011-09-26 | 2011-09-26 | 287 | 95d | 0d |  |  |  |
| 289 | 2.9.1.3 | Determine UAT Test Scope |  | 5d | 2011-09-27 | 2011-10-03 | 288 | 95d | 0d |  |  |  |
| 290 | 2.9.1.4 | Determine UAT Test Approach |  | 3d | 2011-10-04 | 2011-10-06 | 289 | 95d | 0d |  |  |  |
| 291 | 2.9.1.5 | UAT Plan Signoff |  | 1d | 2011-10-07 | 2011-10-07 | 290 | 95d | 0d |  |  |  |

Notes:
- 266: UOB requires 3 months for SIT
- 272: Requires separate box to run this

| ID | WBS | Task | Duration | Start | Finish | Predecessors | Total slack | Free slack | Resources | Work |
| --- | --- | --- | --- | --- | --- | --- | --- | --- | --- | --- |
| 292 | 2.9.1.6 | **Setup UAT Environment** | 10d | 2011-08-11 | 2011-08-24 |  | 85d |  |  |  |
| 293 | 2.9.1.6.1 | Hardware delivered and installation | 1d | 2011-08-11 | 2011-08-11 |  | 94d |  |  |  |
| 294 | 2.9.1.6.2 | Install AIX (2 machine), Disk/ESS Storage setup | 1d | 2011-08-11 | 2011-08-11 |  | 94d |  |  |  |
| 295 | 2.9.1.6.3 | Setup Server Directories, User Groups & Id Accounts | 5d | 2011-08-11 | 2011-08-17 |  | 90d |  |  |  |
| 296 | 2.9.1.6.4 | Install Oracle Database (1 machine) | 3d | 2011-08-11 | 2011-08-15 |  | 92d |  |  |  |
| 297 | 2.9.1.6.5 | Config Oracle Database | 2d | 2011-08-11 | 2011-08-12 |  | 93d |  |  |  |
| 298 | 2.9.1.6.6 | Security/IT System Password Encryption Setup | 5d | 2011-08-11 | 2011-08-17 |  | 90d |  |  |  |
| 299 | 2.9.1.6.7 | Install weblogic on apps server | 1d | 2011-08-11 | 2011-08-11 |  | 94d |  |  |  |
| 300 | 2.9.1.6.8 | Batch Environment Setup: CD Transfer, MQ, Ctrl-M | 10d | 2011-08-11 | 2011-08-24 |  | 85d |  |  |  |
| 301 | 2.9.1.6.9 | Install other sw as appropriate ( SCM, Tivoli End Point, EMC/BMC, TSM etc) | 10d | 2011-08-11 | 2011-08-24 |  | 85d |  |  |  |
| 302 | 2.9.1.6.10 | Program Deployment to SIT | 1d | 2011-08-11 | 2011-08-11 |  | 94d |  |  |  |
| 303 | 2.9.1.6.11 | Hardening on UAT machine | 5d | 2011-08-11 | 2011-08-17 |  | 90d |  |  |  |
| 304 | 2.9.1.6.12 | Connectivity Test | 1d | 2011-08-11 | 2011-08-11 |  | 94d |  |  |  |
| 305 | 2.9.1.6.13 | Setup user access right metrix in system for UAT | 10d | 2011-08-11 | 2011-08-24 |  | 85d |  |  |  |
| 306 | 2.9.1.6.14 | Parameter Setting - Security/IT/Business Admin | 5d | 2011-08-11 | 2011-08-17 |  | 90d |  |  |  |
| 307 | 2.9.1.7 | Site Readiness (Seats, PCs, Networks, Phones) | 2d | 2011-08-11 | 2011-08-12 |  | 148d | 0d | UOB | 16h |
| 308 | 2.9.1.8 | Preparation of UAT Data | 10d | 2011-08-15 | 2011-08-26 | 307 | 148d | 0d | UOB | 80h |
| 309 | 2.9.1.9 | Setup of UAT IDs | 1d | 2011-08-29 | 2011-08-29 | 308 | 148d | 0d | UOB | 8h |
| 310 | 2.9.1.10 | Setup MQC Ids | 1d | 2011-08-30 | 2011-08-30 | 309 | 148d | 0d | UOB | 8h |
| 311 | 2.9.1.11 | Connectivity Tests with Interface Systems | 1d | 2011-08-31 | 2011-08-31 | 310 | 148d | 0d | UOB | 8h |
| 312 | 2.9.1.12 | Apply Application Security | 1d | 2011-09-01 | 2011-09-01 | 311 | 148d | 0d | UOB | 8h |
| 313 | 2.9.1.13 | Prepare/Review UAT Test Script | 3d | 2011-09-02 | 2011-09-06 | 312 | 148d |  | UOB | 24h |
| 314 | 2.9.1.14 | **Conduct of UAT** | 65d | 2011-12-22 | 2012-03-21 | 236 | 0d |  |  |  |
| 315 | 2.9.1.14.1 | Setup of Control-M | 1d | 2011-12-22 | 2011-12-22 | 271, 292 | 0d |  |  |  |
| 316 | 2.9.1.14.2 | UAT Cycle 1 | 31d | 2011-12-23 | 2012-02-03 | 315 | 0d |  |  |  |
| 317 | 2.9.1.14.3 | UAT Cycle 2 | 32d | 2012-02-06 | 2012-03-20 | 316 | 0d |  |  |  |
| 318 | 2.9.1.14.4 | Update Action Logs on outstanding MQC | 1d | 2012-03-21 | 2012-03-21 | 317 | 7d |  |  |  |
| 319 | 2.9.1.14.5 | UAT Signoff | 1d | 2012-03-21 | 2012-03-21 | 317 | 4d | 0d |  |  |

Notes:
- 292: Bank to confirm this portion

| ID | WBS | Task | Duration | Start | Finish | Predecessors | Total slack | Free slack |
| --- | --- | --- | --- | --- | --- | --- | --- | --- |
| 320 | 2.9.1.15 | **Data Conversion UAT** | 21d | 2011-08-11 | 2011-09-08 |  | 146d |  |
| 321 | 2.9.1.15.1 | Prepare UAT Conv Plan | 5d | 2011-08-11 | 2011-08-17 |  | 146d | 0d |
| 322 | 2.9.1.15.2 | Conduct UAT Conv Plan Review Meeting | 1d | 2011-08-18 | 2011-08-18 | 321 | 146d | 0d |
| 323 | 2.9.1.15.3 | Determine UAT Conv Test Scope | 5d | 2011-08-19 | 2011-08-25 | 322 | 146d | 0d |
| 324 | 2.9.1.15.4 | Determine Conv Test Approach | 3d | 2011-08-26 | 2011-08-30 | 323 | 146d | 0d |
| 325 | 2.9.1.15.5 | UAT Conv Plan Signoff | 1d | 2011-08-31 | 2011-08-31 | 324 | 146d | 0d |
| 326 | 2.9.1.15.6 | Setup UAT Conv Environment | 3d | 2011-09-01 | 2011-09-05 | 325 | 146d | 0d |
| 327 | 2.9.1.15.7 | Prepare/Review UAT Conv Test Script | 3d | 2011-09-06 | 2011-09-08 | 326 | 146d |  |
| 328 | 2.9.1.16 | **Conduct of Conv UAT** | 50d | 2011-12-13 | 2012-02-20 | 284 | 7d |  |
| 329 | 2.9.1.16.1 | UAT Conv Cycle 1 | 24d | 2011-12-13 | 2012-01-13 |  | 7d | 0d |
| 330 | 2.9.1.16.2 | UAT Conv Cycle 2 | 24d | 2012-01-16 | 2012-02-16 | 329 | 29d | 0d |
| 331 | 2.9.1.16.3 | Update Action Logs on outstanding MQC | 1d | 2012-02-17 | 2012-02-17 | 330 | 29d | 0d |
| 332 | 2.9.1.16.4 | UAT Conv Signoff | 1d | 2012-02-20 | 2012-02-20 | 331 | 29d |  |
| 333 | 2.9.1.17 | **Data Conversion Mock Run** | 1d? | 2011-08-11 | 2011-08-11 |  | 166d |  |
| 334 | 2.9.1.17.1 | Setup MR Conv Environment | 1d? | 2011-08-11 | 2011-08-11 |  | 166d |  |
| 335 | 2.9.1.17.2 | Restore Production data to MR environment | 1d? | 2011-08-11 | 2011-08-11 |  | 166d |  |
| 336 | 2.9.1.17.3 | Prepare/Review MR Conv Test Script | 1d? | 2011-08-11 | 2011-08-11 |  | 166d |  |
| 337 | 2.9.1.18 | **Conduct of Conv Mock Run** | 48d | 2012-01-16 | 2012-03-21 |  | 7d |  |
| 338 | 2.9.1.18.1 | MR Conv Cycle 1 | 3d | 2012-01-16 | 2012-01-18 | 329 | 7d | 0d |
| 339 | 2.9.1.18.2 | Data Cleansing | 20d | 2012-01-19 | 2012-02-15 | 338 | 7d | 0d |
| 340 | 2.9.1.18.3 | MR Conv Cycle 2 | 3d | 2012-02-16 | 2012-02-20 | 339 | 7d | 0d |
| 341 | 2.9.1.18.4 | Data Cleansing | 20d | 2012-02-21 | 2012-03-19 | 340 | 7d | 0d |
| 342 | 2.9.1.18.5 | Update Action Logs on outstanding MQC | 1d | 2012-03-20 | 2012-03-20 | 341 | 7d | 0d |
| 343 | 2.9.1.18.6 | MR Conv Signoff | 1d | 2012-03-21 | 2012-03-21 | 342 | 7d |  |

| ID | WBS | Task | Type | Duration | Start | Finish | Predecessors | Total slack | Free slack | Resources | Work |
| --- | --- | --- | --- | --- | --- | --- | --- | --- | --- | --- | --- |
| 344 | 2.10 | **Performance Test** |  | 107d | 2011-10-10 | 2012-03-06 | 291 | 18d |  | UOB | 1548h |
| 345 | 2.10.1 | Prepare Performance Test Plan |  | 1.5d | 2011-10-10 | 2011-10-11 |  | 95d | 0d | UOB | 12h |
| 346 | 2.10.2 | Performance Test Plan Review Meeting |  | 0.5d | 2011-10-11 | 2011-10-11 | 345 | 95d | 0d | UOB; Integro | 8h |
| 347 | 2.10.3 | Determine Perf Test Scope |  | 3d | 2011-10-12 | 2011-10-14 | 346 | 95d | 0d | UOB | 24h |
| 348 | 2.10.4 | Determine Test Approach |  | 1.5d | 2011-10-17 | 2011-10-18 | 347 | 95d | 0d | UOB; Integro | 24h |
| 349 | 2.10.5 | Signoff Performance Test Plan |  | 1d | 2011-10-18 | 2011-10-19 | 348 | 95d | 0d | UOB | 8h |
| 350 | 2.10.6 | Setup Performance Test Environment |  | 5d | 2011-10-19 | 2011-10-26 | 349 | 95d | 0d | UOB | 40h |
| 351 | 2.10.7 | Site Readiness (Seats, PCs, Networks, Phones) |  | 1d | 2011-10-26 | 2011-10-27 | 350 | 95d | 0d | UOB | 8h |
| 352 | 2.10.8 | Ready Performance Test Hardware |  | 5d | 2011-10-27 | 2011-11-03 | 351 | 95d | 0d | UOB | 40h |
| 353 | 2.10.9 | System Software Install |  | 1d | 2011-11-03 | 2011-11-04 | 352 | 95d | 0d | UOB | 8h |
| 354 | 2.10.10 | Creation of Database |  | 2d | 2011-11-04 | 2011-11-08 | 353 | 95d | 0d | UOB | 16h |
| 355 | 2.10.11 | Install of Application Software |  | 1d | 2011-11-08 | 2011-11-09 | 354 | 95d | 0d | UOB | 8h |
| 356 | 2.10.12 | Setup of Test IDs |  | 1d | 2011-11-09 | 2011-11-10 | 355 | 95d | 0d | UOB | 8h |
| 357 | 2.10.13 | Connectivity Tests |  | 1d | 2011-11-10 | 2011-11-11 | 356 | 95d | 0d | UOB | 8h |
| 358 | 2.10.14 | Scripting for Performance Test Scenarios |  | 0.5d | 2011-11-11 | 2011-11-11 | 357 | 95d | 0d | UOB; Integro | 8h |
| 359 | 2.10.15 | Prepare Test Data |  | 5d | 2011-11-14 | 2011-11-18 | 358 | 95d |  | UOB | 40h |
| 360 | 2.10.16 | **Conduct of Performance Test** |  | 21d | 2012-02-06 | 2012-03-05 | 316 | 18d |  | UOB | 408h |
| 361 | 2.10.16.1 | Perf Test Cycle 1 |  | 5d | 2012-02-06 | 2012-02-10 |  | 18d | 0d | UOB | 40h |
| 362 | 2.10.16.2 | Resolve Performance Issues |  | 5d | 2012-02-08 | 2012-02-14 | 361FS-3d | 18d | 0d | Integro | 40h |
| 363 | 2.10.16.3 | Perf Test Cycle 2 |  | 5d | 2012-02-15 | 2012-02-21 | 362 | 18d | 0d | UOB | 40h |
| 364 | 2.10.16.4 | Resolve Performance Issues |  | 5d | 2012-02-17 | 2012-02-23 | 363FS-3d | 18d | 0d | Integro | 40h |
| 365 | 2.10.16.5 | Perf Test Cycle 3 |  | 5d | 2012-02-24 | 2012-03-01 | 364 | 18d | 0d | UOB | 40h |
| 366 | 2.10.16.6 | Resolve Performance Issues |  | 5d | 2012-02-28 | 2012-03-05 | 365FS-3d | 19d |  | Integro | 40h |
| 367 | 2.10.17 | Prepare Perf Test Report |  | 3d | 2012-03-02 | 2012-03-06 | 365 | 18d | 0d | UOB | 24h |
| 368 | 2.10.18 | Signoff Perf Test | milestone | 0d | 2012-03-06 | 2012-03-06 | 367 | 18d |  | UOB |  |

| ID | WBS | Task | Duration | Start | Finish | Predecessors | Total slack | Free slack | Deadline | Resources | Work |
| --- | --- | --- | --- | --- | --- | --- | --- | --- | --- | --- | --- |
| 369 | 2.11 | **Training** | 325d | 2011-01-03 | 2012-03-30 |  | 0d |  |  |  | 552h |
| 370 | 2.11.1 | Prepare/Review Training Plan | 5d | 2011-01-03 | 2011-01-07 |  | 43d | 0d | 2011-03-09 | Integro | 40h |
| 371 | 2.11.2 | Signoff Training Plan | 1d | 2011-01-10 | 2011-01-10 | 370 | 289d | 0d |  | Integro | 8h |
| 372 | 2.11.3 | Prepare User Manual | 30d | 2011-01-11 | 2011-02-21 | 371 | 289d |  |  | Integro | 240h |
| 373 | 2.11.4 | Prepare Training Materials | 10d | 2011-01-10 | 2011-01-21 | 370 | 310d |  |  | Integro | 80h |
| 374 | 2.11.5 | Book Training Facilities | 5d | 2011-01-10 | 2011-01-14 | 370 | 315d |  |  | Integro | 40h |
| 375 | 2.11.6 | Workout Training Schedule | 5d | 2011-01-10 | 2011-01-14 | 370 | 315d |  |  | UOB; Integro | 80h |
| 376 | 2.11.7 | Conduct of User Training | 8d | 2012-03-21 | 2012-03-30 | 317 | 0d |  |  | Integro | 64h |
| 377 | 2.12 | **Deployment** | 1d? | 2012-03-22 | 2012-03-22 | 319 | 4d | 0d |  | UOB | 160h |
| 378 | 2.12.1 | **Deployment Preparation** | 1d? | 2012-03-22 | 2012-03-22 |  | 4d |  |  | UOB | 48h |
| 379 | 2.12.1.1 | Prepare/Review Rollout Plan | 1d? | 2012-03-22 | 2012-03-22 |  | 4d |  |  | UOB | 8h |
| 380 | 2.12.1.2 | Signoff Rollout Plan | 1d? | 2012-03-22 | 2012-03-22 |  | 4d |  |  | UOB | 8h |
| 381 | 2.12.1.3 | Prepare deployment checklist & cutover-hour-by-hour WBS | 1d? | 2012-03-22 | 2012-03-22 |  | 4d |  |  | UOB | 8h |
| 382 | 2.12.1.4 | Brief IT help desk & IT Ops & CPM | 1d? | 2012-03-22 | 2012-03-22 |  | 4d |  |  | UOB | 8h |
| 383 | 2.12.1.5 | Brief all stakehokders on the cutover acitivities and responsibilities | 1d? | 2012-03-22 | 2012-03-22 |  | 4d |  |  | UOB | 8h |
| 384 | 2.12.2 | **Setup Prod Environment** | 1d? | 2012-03-22 | 2012-03-22 |  | 4d |  |  | UOB | 104h |
| 385 | 2.12.2.1 | Hardware delivered and installation | 1d? | 2012-03-22 | 2012-03-22 |  | 4d |  |  | UOB | 8h |
| 386 | 2.12.2.2 | Install AIX (2 machine), Disk/ESS Storage setup | 1d? | 2012-03-22 | 2012-03-22 |  | 4d |  |  | UOB | 8h |
| 387 | 2.12.2.3 | Setup Server Directories, User Groups & Id Accounts | 1d? | 2012-03-22 | 2012-03-22 |  | 4d |  |  | UOB | 8h |
| 388 | 2.12.2.4 | Install Oracle Database (1 machine) | 1d? | 2012-03-22 | 2012-03-22 |  | 4d |  |  | UOB | 8h |
| 389 | 2.12.2.5 | Config Oracle Database | 1d? | 2012-03-22 | 2012-03-22 |  | 4d |  |  | UOB | 8h |
| 390 | 2.12.2.6 | Security/IT System Password Encryption Setup | 1d? | 2012-03-22 | 2012-03-22 |  | 4d |  |  | UOB | 8h |
| 391 | 2.12.2.7 | Install weblogic on apps server | 1d? | 2012-03-22 | 2012-03-22 |  | 4d |  |  | UOB | 8h |
| 392 | 2.12.2.8 | Batch Environment Setup: CD Transfer, MQ, Ctrl-M | 1d? | 2012-03-22 | 2012-03-22 |  | 4d |  |  | UOB | 8h |
| 393 | 2.12.2.9 | Install other sw as appropriate ( SCM, Tivoli End Point, EMC/BMC, TSM etc) | 1d? | 2012-03-22 | 2012-03-22 |  | 4d |  |  | UOB | 8h |
| 394 | 2.12.2.10 | Hardening on SIT machine | 1d? | 2012-03-22 | 2012-03-22 |  | 4d |  |  | UOB | 8h |
| 395 | 2.12.2.11 | Connectivity Test | 1d? | 2012-03-22 | 2012-03-22 |  | 4d |  |  | UOB | 8h |
| 396 | 2.12.2.12 | Parameter Setting - Security/IT/Business Admin | 1d? | 2012-03-22 | 2012-03-22 |  | 4d |  |  | UOB | 8h |

Notes:
- 377: UOB IT to update

| ID | WBS | Task | Duration | Start | Finish | Predecessors | Total slack | Free slack | Resources | Work |
| --- | --- | --- | --- | --- | --- | --- | --- | --- | --- | --- |
| 397 | 2.13 | **DR Test** | 1d? | 2012-03-23 | 2012-03-23 | 377 | 4d | 0d | UOB | 24h |
| 398 | 2.13.1 | Prepare DR Test Plan | 1d? | 2012-03-23 | 2012-03-23 |  | 4d |  |  |  |
| 399 | 2.13.2 | DR Test Plan Review Meeting | 0.5d? | 2012-03-23 | 2012-03-23 |  | 4.5d |  | UOB; Integro | 8h |
| 400 | 2.13.3 | identify DR Test Scope | 1d? | 2012-03-23 | 2012-03-23 |  | 4d |  |  |  |
| 401 | 2.13.4 | Determine schedule | 1d? | 2012-03-23 | 2012-03-23 |  | 4d |  |  |  |
| 402 | 2.13.5 | Determine Test Approach | 1d? | 2012-03-23 | 2012-03-23 |  | 4d |  |  |  |
| 403 | 2.13.6 | Determine Resource | 1d? | 2012-03-23 | 2012-03-23 |  | 4d |  |  |  |
| 404 | 2.13.7 | Signoff DR Test Plan | 1d? | 2012-03-23 | 2012-03-23 |  | 4d |  |  |  |
| 405 | 2.13.8 | Setup DR Test Environment | 1d? | 2012-03-23 | 2012-03-23 |  | 4d |  |  |  |
| 406 | 2.13.9 | Ready DR Test Hardware | 1d? | 2012-03-23 | 2012-03-23 |  | 4d |  |  |  |
| 407 | 2.13.10 | System Software Install | 1d? | 2012-03-23 | 2012-03-23 |  | 4d |  |  |  |
| 408 | 2.13.11 | Creation of Database | 1d? | 2012-03-23 | 2012-03-23 |  | 4d |  |  |  |
| 409 | 2.13.12 | Install of Application Software | 1d? | 2012-03-23 | 2012-03-23 |  | 4d |  |  |  |
| 410 | 2.13.13 | Setup of DR Test Ds | 1d? | 2012-03-23 | 2012-03-23 |  | 4d |  |  |  |
| 411 | 2.13.14 | Connectivity Tests | 1d? | 2012-03-23 | 2012-03-23 |  | 4d |  |  |  |
| 412 | 2.13.15 | Prepare DR Test Data | 1d? | 2012-03-23 | 2012-03-23 |  | 4d |  |  |  |
| 413 | 2.13.16 | Prepare DR Procedure | 1d? | 2012-03-23 | 2012-03-23 |  | 4d |  |  |  |
| 414 | 2.13.17 | Conduct of DR Test | 1d? | 2012-03-23 | 2012-03-23 |  | 4d |  |  |  |
| 415 | 2.13.18 | Fix any issues reported for DR | 1d? | 2012-03-23 | 2012-03-23 |  | 4d |  | Integro | 8h |
| 416 | 2.13.19 | Prepare DR Test Report | 1d? | 2012-03-23 | 2012-03-23 |  | 4d |  |  |  |
| 417 | 2.13.20 | Prepare DR Doc | 1d? | 2012-03-23 | 2012-03-23 |  | 4d |  |  |  |
| 418 | 2.13.21 | Signoff DR Docs | 1d? | 2012-03-23 | 2012-03-23 |  | 4d |  |  |  |
| 419 | 2.14 | **Cutover Day** | 1d? | 2012-03-26 | 2012-03-26 | 397 | 4d |  | UOB | 8h |
| 420 | 2.14.1 | Create table, schema, update tables in DB server | 1d? | 2012-03-26 | 2012-03-26 |  | 4d |  |  |  |
| 421 | 2.14.2 | Deploy & Start Application | 1d? | 2012-03-26 | 2012-03-26 |  | 4d |  |  |  |
| 422 | 2.14.3 | Admin IS create user ids | 1d? | 2012-03-26 | 2012-03-26 |  | 4d |  |  |  |
| 423 | 2.14.4 | Conversion verification | 1d? | 2012-03-26 | 2012-03-26 |  | 4d |  |  |  |
| 424 | 2.14.5 | Check conversion reports | 1d? | 2012-03-26 | 2012-03-26 |  | 4d |  |  |  |
| 425 | 2.14.6 | Conduct Pre-live test | 1d? | 2012-03-26 | 2012-03-26 |  | 4d |  |  |  |
| 426 | 2.14.7 | Decide Go / No Go - Obtain Cutver Signoff | 1d? | 2012-03-26 | 2012-03-26 |  | 4d |  |  |  |
| 427 | 2.14.8 | System Live | 1d? | 2012-03-26 | 2012-03-26 |  | 4d |  |  |  |

Notes:
- 397: UOB IT to update
